| id | name | wbs | outline_number | outline_level | start | finish | duration | percent_complete | is_summary | is_critical | baseline | parent_id | is_milestone | assignments | notes |
| --- | --- | --- | --- | --- | --- | --- | --- | --- | --- | --- | --- | --- | --- | --- | --- |
| 1 | Pre-construction | 1 | 1 | 1 | 2026-01-12T08:00:00 | 2026-02-23T17:00:00 | 31.0 DAYS | 0.0 | True | True | 2026-01-12T08:00:00 2026-02-23T17:00:00 |  |  |  |  |
| 2 | Agreement for lease signed | 1.1 | 1.1 | 2 | 2026-01-12T08:00:00 | 2026-01-12T17:00:00 | 0.0 DAYS | 100.0 |  | True | 2026-01-12T08:00:00 2026-01-12T17:00:00 | 1 | True |  |  |
| 3 | Measured survey of existing floor | 1.2 | 1.2 | 2 | 2026-01-13T08:00:00 | 2026-01-16T17:00:00 | 4.0 DAYS | 100.0 |  | True | 2026-01-13T08:00:00 2026-01-16T17:00:00 | 1 |  | 3 100.0 |  |
| 4 | Test fits and space plan | 1.3 | 1.3 | 2 | 2026-01-19T08:00:00 | 2026-01-28T17:00:00 | 8.0 DAYS | 100.0 |  | True | 2026-01-19T08:00:00 2026-01-28T17:00:00 | 1 |  | 3 100.0, 1 50.0 | Three options priced. Client took option B with the 14-desk bench layout. |
| 5 | Client sign-off on layout | 1.4 | 1.4 | 2 | 2026-01-29T08:00:00 | 2026-01-29T17:00:00 | 0.0 DAYS | 100.0 |  | True | 2026-01-29T08:00:00 2026-01-29T17:00:00 | 1 | True |  |  |
| 6 | Landlord consent pack | 1.5 | 1.5 | 2 | 2026-01-30T08:00:00 | 2026-02-06T17:00:00 | 6.0 DAYS | 100.0 |  |  | 2026-01-30T08:00:00 2026-02-06T17:00:00 | 1 |  | 1 100.0 |  |
| 7 | Landlord licence to alter granted | 1.6 | 1.6 | 2 | 2026-02-23T08:00:00 | 2026-02-23T17:00:00 | 0.0 DAYS | 100.0 |  |  | 2026-02-23T08:00:00 2026-02-23T17:00:00 | 1 | True |  | Ten working days with the managing agent. Assume the same on any future floor. |
| 8 | Design and procurement | 2 | 2 | 1 | 2026-01-30T08:00:00 | 2026-04-14T17:00:00 | 51.0 DAYS | 0.0 | True | True | 2026-01-30T08:00:00 2026-04-14T17:00:00 |  |  |  |  |
| 9 | Detailed design | 2.1 | 2.1 | 2 | 2026-01-30T08:00:00 | 2026-02-23T17:00:00 | 17.0 DAYS | 0.0 | True | True | 2026-01-30T08:00:00 2026-02-23T17:00:00 | 8 |  |  |  |
| 10 | Partition and ceiling drawings | 2.1.1 | 2.1.1 | 3 | 2026-01-30T08:00:00 | 2026-02-12T17:00:00 | 10.0 DAYS | 100.0 |  |  | 2026-01-30T08:00:00 2026-02-12T17:00:00 | 9 |  | 3 100.0 |  |
| 11 | Mechanical and electrical coordination | 2.1.2 | 2.1.2 | 3 | 2026-01-30T08:00:00 | 2026-02-11T17:00:00 | 9.0 DAYS | 100.0 |  | True | 2026-01-30T08:00:00 2026-02-11T17:00:00 | 9 |  | 4 100.0 | Existing riser is tighter than the landlord drawings show. Survey photos in the folder. |
| 12 | Lighting and small power layout | 2.1.3 | 2.1.3 | 3 | 2026-02-05T08:00:00 | 2026-02-16T17:00:00 | 8.0 DAYS | 100.0 |  | True | 2026-02-05T08:00:00 2026-02-16T17:00:00 | 9 |  | 4 100.0 |  |
| 13 | Joinery details - tea point and reception | 2.1.4 | 2.1.4 | 3 | 2026-02-13T08:00:00 | 2026-02-23T17:00:00 | 7.0 DAYS | 100.0 |  |  | 2026-02-13T08:00:00 2026-02-23T17:00:00 | 9 |  | 3 100.0 |  |
| 14 | Procurement | 2.2 | 2.2 | 2 | 2026-02-17T08:00:00 | 2026-04-14T17:00:00 | 39.0 DAYS | 0.0 | True | True | 2026-02-17T08:00:00 2026-04-14T17:00:00 | 8 |  |  |  |
| 15 | Tender issued to three contractors | 2.2.1 | 2.2.1 | 3 | 2026-02-17T08:00:00 | 2026-02-18T17:00:00 | 2.0 DAYS | 100.0 |  | True | 2026-02-17T08:00:00 2026-02-18T17:00:00 | 14 |  | 1 100.0 |  |
| 16 | Tender period | 2.2.2 | 2.2.2 | 3 | 2026-02-19T08:00:00 | 2026-03-06T17:00:00 | 12.0 DAYS | 100.0 |  | True | 2026-02-19T08:00:00 2026-03-06T17:00:00 | 14 |  |  |  |
| 17 | Tender review and levelling | 2.2.3 | 2.2.3 | 3 | 2026-03-09T08:00:00 | 2026-03-13T17:00:00 | 5.0 DAYS | 100.0 |  | True | 2026-03-09T08:00:00 2026-03-13T17:00:00 | 14 |  | 1 100.0, 2 50.0 | Lowest was 9% under the others on M&E. Asked them to reprice - they had missed the sprinkler drops. |
| 18 | Contractor appointed | 2.2.4 | 2.2.4 | 3 | 2026-03-16T08:00:00 | 2026-03-16T17:00:00 | 0.0 DAYS | 100.0 |  | True | 2026-03-16T08:00:00 2026-03-16T17:00:00 | 14 | True |  |  |
| 19 | Bespoke joinery ordered | 2.2.5 | 2.2.5 | 3 | 2026-03-17T08:00:00 | 2026-03-17T17:00:00 | 1.0 DAYS | 100.0 |  |  | 2026-03-17T08:00:00 2026-03-17T17:00:00 | 14 |  | 2 100.0 |  |
| 20 | Joinery manufacture | 2.2.6 | 2.2.6 | 3 | 2026-03-18T08:00:00 | 2026-04-14T17:00:00 | 18.0 DAYS | 100.0 |  |  | 2026-03-18T08:00:00 2026-04-14T17:00:00 | 14 |  |  | Eight week lead quoted, five achieved. Do not rely on it next time. |
| 21 | Light fittings ordered | 2.2.7 | 2.2.7 | 3 | 2026-03-17T08:00:00 | 2026-03-17T17:00:00 | 1.0 DAYS | 100.0 |  |  | 2026-03-17T08:00:00 2026-03-17T17:00:00 | 14 |  | 2 100.0 |  |
| 22 | Light fitting delivery | 2.2.8 | 2.2.8 | 3 | 2026-03-18T08:00:00 | 2026-04-08T17:00:00 | 14.0 DAYS | 100.0 |  |  | 2026-03-18T08:00:00 2026-04-08T17:00:00 | 14 |  |  |  |
| 23 | Furniture ordered | 2.2.9 | 2.2.9 | 3 | 2026-03-17T08:00:00 | 2026-03-17T17:00:00 | 1.0 DAYS | 100.0 |  |  | 2026-03-17T08:00:00 2026-03-17T17:00:00 | 14 |  | 1 100.0 |  |
| 24 | Site works | 3 | 3 | 1 | 2026-03-17T08:00:00 | 2026-06-11T17:00:00 | 60.0 DAYS | 0.0 | True | True | 2026-03-17T08:00:00 2026-06-09T17:00:00 |  |  |  |  |
| 25 | Enabling works | 3.1 | 3.1 | 2 | 2026-03-17T08:00:00 | 2026-03-31T17:00:00 | 11.0 DAYS | 0.0 | True | True | 2026-03-17T08:00:00 2026-03-31T17:00:00 | 24 |  |  |  |
| 26 | Site set up and floor protection | 3.1.1 | 3.1.1 | 3 | 2026-03-17T08:00:00 | 2026-03-19T17:00:00 | 3.0 DAYS | 100.0 |  | True | 2026-03-17T08:00:00 2026-03-19T17:00:00 | 25 |  | 2 100.0 |  |
| 27 | Strip out partitions and floor finishes | 3.1.2 | 3.1.2 | 3 | 2026-03-20T08:00:00 | 2026-03-31T17:00:00 | 8.0 DAYS | 100.0 |  | True | 2026-03-20T08:00:00 2026-03-31T17:00:00 | 25 |  | 2 100.0 |  |
| 28 | Remove redundant mechanical and electrical | 3.1.3 | 3.1.3 | 3 | 2026-03-25T08:00:00 | 2026-03-31T17:00:00 | 5.0 DAYS | 100.0 |  |  | 2026-03-25T08:00:00 2026-03-31T17:00:00 | 25 |  | 5 100.0 | Found live circuits feeding level 5 in the same trunking. Isolated out of hours. |
| 29 | First fix | 3.2 | 3.2 | 2 | 2026-04-01T08:00:00 | 2026-04-24T17:00:00 | 16.0 DAYS | 0.0 | True | True | 2026-04-01T08:00:00 2026-04-24T17:00:00 | 24 |  |  |  |
| 30 | Builderswork openings and riser alterations | 3.2.1 | 3.2.1 | 3 | 2026-04-01T08:00:00 | 2026-04-10T17:00:00 | 6.0 DAYS | 100.0 |  | True | 2026-04-01T08:00:00 2026-04-10T17:00:00 | 29 |  | 2 100.0 |  |
| 31 | First fix electrical containment | 3.2.2 | 3.2.2 | 3 | 2026-04-13T08:00:00 | 2026-04-24T17:00:00 | 10.0 DAYS | 100.0 |  | True | 2026-04-13T08:00:00 2026-04-24T17:00:00 | 29 |  | 5 100.0 |  |
| 32 | Ductwork modifications | 3.2.3 | 3.2.3 | 3 | 2026-04-13T08:00:00 | 2026-04-17T17:00:00 | 5.0 DAYS | 100.0 |  |  | 2026-04-13T08:00:00 2026-04-17T17:00:00 | 29 |  | 4 50.0 |  |
| 33 | Sprinkler head relocation | 3.2.4 | 3.2.4 | 3 | 2026-04-15T08:00:00 | 2026-04-17T17:00:00 | 3.0 DAYS | 100.0 |  |  | 2026-04-15T08:00:00 2026-04-17T17:00:00 | 29 |  | 5 50.0 |  |
| 34 | Partitions and ceilings | 3.3 | 3.3 | 2 | 2026-04-27T08:00:00 | 2026-05-28T17:00:00 | 23.0 DAYS | 0.0 | True | True | 2026-04-27T08:00:00 2026-05-28T17:00:00 | 24 |  |  |  |
| 35 | Metal stud partitions erected | 3.3.1 | 3.3.1 | 3 | 2026-04-27T08:00:00 | 2026-05-13T17:00:00 | 12.0 DAYS | 100.0 |  | True | 2026-04-27T08:00:00 2026-05-13T17:00:00 | 34 |  | 6 100.0 |  |
| 36 | Plasterboard, tape and joint | 3.3.2 | 3.3.2 | 3 | 2026-05-05T08:00:00 | 2026-05-18T17:00:00 | 10.0 DAYS | 100.0 |  | True | 2026-05-05T08:00:00 2026-05-18T17:00:00 | 34 |  | 6 100.0 |  |
| 37 | Suspended ceiling grid | 3.3.3 | 3.3.3 | 3 | 2026-05-19T08:00:00 | 2026-05-28T17:00:00 | 8.0 DAYS | 100.0 |  | True | 2026-05-19T08:00:00 2026-05-28T17:00:00 | 34 |  | 6 100.0 |  |
| 38 | Acoustic infill to meeting rooms | 3.3.4 | 3.3.4 | 3 | 2026-05-22T08:00:00 | 2026-05-27T17:00:00 | 4.0 DAYS | 100.0 |  |  | 2026-05-22T08:00:00 2026-05-27T17:00:00 | 34 |  | 6 50.0 | Client asked for 45dB to the two rooms on the south side after the mock-up. |
| 39 | Second fix | 3.4 | 3.4 | 2 | 2026-05-14T08:00:00 | 2026-06-11T17:00:00 | 21.0 DAYS | 0.0 | True | True | 2026-05-14T08:00:00 2026-06-09T17:00:00 | 24 |  |  |  |
| 40 | Second fix electrical | 3.4.1 | 3.4.1 | 3 | 2026-05-29T08:00:00 | 2026-06-11T17:00:00 | 10.0 DAYS | 90.0 |  | True | 2026-05-27T08:00:00 2026-06-09T17:00:00 | 39 |  | 5 100.0 |  |
| 41 | Light fittings installed | 3.4.2 | 3.4.2 | 3 | 2026-06-04T08:00:00 | 2026-06-11T17:00:00 | 6.0 DAYS | 65.0 |  | True | 2026-06-01T08:00:00 2026-06-08T17:00:00 | 39 |  | 5 100.0 |  |
| 42 | Data cabling and testing | 3.4.3 | 3.4.3 | 3 | 2026-05-29T08:00:00 | 2026-06-10T17:00:00 | 9.0 DAYS | 55.0 |  |  | 2026-05-25T08:00:00 2026-06-04T17:00:00 | 39 |  | 7 100.0 | Two runs failed Cat6A certification on the first test. Reterminating both ends before we retest. |
| 43 | Doors, frames and ironmongery | 3.4.4 | 3.4.4 | 3 | 2026-05-19T08:00:00 | 2026-05-27T17:00:00 | 7.0 DAYS | 100.0 |  |  | 2026-05-19T08:00:00 2026-05-27T17:00:00 | 39 |  | 6 50.0 |  |
| 44 | Tea point plumbing | 3.4.5 | 3.4.5 | 3 | 2026-05-14T08:00:00 | 2026-05-19T17:00:00 | 4.0 DAYS | 100.0 |  |  | 2026-05-14T08:00:00 2026-05-19T17:00:00 | 39 |  | 5 50.0 |  |
| 45 | Finishes | 4 | 4 | 1 | 2026-05-28T08:00:00 | 2026-07-13T17:00:00 | 33.0 DAYS | 0.0 | True | True | 2026-05-25T08:00:00 2026-07-13T17:00:00 |  |  |  |  |
| 46 | Mist coat and first coat decoration | 4.1 | 4.1 | 2 | 2026-05-28T08:00:00 | 2026-06-04T17:00:00 | 6.0 DAYS | 40.0 |  |  | 2026-05-25T08:00:00 2026-06-01T17:00:00 | 45 |  | 8 100.0 |  |
| 47 | Final coat decoration | 4.2 | 4.2 | 2 | 2026-06-12T08:00:00 | 2026-06-18T17:00:00 | 5.0 DAYS | 0.0 |  | True | 2026-06-12T08:00:00 2026-06-18T17:00:00 | 45 |  | 8 100.0 |  |
| 48 | Carpet tiles to open plan | 4.3 | 4.3 | 2 | 2026-06-19T08:00:00 | 2026-06-26T17:00:00 | 6.0 DAYS | 0.0 |  | True | 2026-06-19T08:00:00 2026-06-26T17:00:00 | 45 |  | 9 100.0 |  |
| 49 | Vinyl to tea point and wet areas | 4.4 | 4.4 | 2 | 2026-06-19T08:00:00 | 2026-06-23T17:00:00 | 3.0 DAYS | 0.0 |  |  | 2026-06-19T08:00:00 2026-06-23T17:00:00 | 45 |  | 9 100.0 |  |
| 50 | Joinery installation | 4.5 | 4.5 | 2 | 2026-06-29T08:00:00 | 2026-07-08T17:00:00 | 8.0 DAYS | 0.0 |  | True | 2026-06-29T08:00:00 2026-07-08T17:00:00 | 45 |  | 6 100.0 |  |
| 51 | Glazed manifestation and signage | 4.6 | 4.6 | 2 | 2026-07-09T08:00:00 | 2026-07-13T17:00:00 | 3.0 DAYS | 0.0 |  | True | 2026-07-09T08:00:00 2026-07-13T17:00:00 | 45 |  | 9 50.0 |  |
| 52 | Commissioning and handover | 5 | 5 | 1 | 2026-06-19T08:00:00 | 2026-08-11T17:00:00 | 38.0 DAYS | 0.0 | True | True | 2026-06-19T08:00:00 2026-08-11T17:00:00 |  |  |  |  |
| 53 | Mechanical and electrical commissioning | 5.1 | 5.1 | 2 | 2026-06-19T08:00:00 | 2026-06-26T17:00:00 | 6.0 DAYS | 0.0 |  |  | 2026-06-19T08:00:00 2026-06-26T17:00:00 | 52 |  | 5 100.0, 4 50.0 |  |
| 54 | Building control inspection | 5.2 | 5.2 | 2 | 2026-06-29T08:00:00 | 2026-06-30T17:00:00 | 2.0 DAYS | 0.0 |  |  | 2026-06-29T08:00:00 2026-06-30T17:00:00 | 52 |  | 1 50.0 |  |
| 55 | Snagging inspection | 5.3 | 5.3 | 2 | 2026-07-14T08:00:00 | 2026-07-16T17:00:00 | 3.0 DAYS | 0.0 |  | True | 2026-07-14T08:00:00 2026-07-16T17:00:00 | 52 |  | 1 100.0, 2 100.0 |  |
| 56 | Snagging works | 5.4 | 5.4 | 2 | 2026-07-17T08:00:00 | 2026-07-28T17:00:00 | 8.0 DAYS | 0.0 |  | True | 2026-07-17T08:00:00 2026-07-28T17:00:00 | 52 |  | 2 100.0 | Allow eight days. On the last two floors it was six and eleven. |
| 57 | Furniture delivery and build | 5.5 | 5.5 | 2 | 2026-07-22T08:00:00 | 2026-07-28T17:00:00 | 5.0 DAYS | 0.0 |  | True | 2026-07-22T08:00:00 2026-07-28T17:00:00 | 52 |  | 9 100.0 |  |
| 58 | IT equipment and AV install | 5.6 | 5.6 | 2 | 2026-07-24T08:00:00 | 2026-07-31T17:00:00 | 6.0 DAYS | 0.0 |  | True | 2026-07-24T08:00:00 2026-07-31T17:00:00 | 52 |  | 7 100.0 |  |
| 59 | Builders clean | 5.7 | 5.7 | 2 | 2026-07-29T08:00:00 | 2026-07-30T17:00:00 | 2.0 DAYS | 0.0 |  |  | 2026-07-29T08:00:00 2026-07-30T17:00:00 | 52 |  | 10 100.0 |  |
| 60 | Client walk-round | 5.8 | 5.8 | 2 | 2026-08-03T08:00:00 | 2026-08-03T17:00:00 | 1.0 DAYS | 0.0 |  | True | 2026-08-03T08:00:00 2026-08-03T17:00:00 | 52 |  | 1 100.0 |  |
| 61 | Practical completion | 5.9 | 5.9 | 2 | 2026-08-04T08:00:00 | 2026-08-04T17:00:00 | 0.0 DAYS | 0.0 |  | True | 2026-08-04T08:00:00 2026-08-04T17:00:00 | 52 | True |  |  |
| 62 | O and M manuals and as-built drawings | 5.10 | 5.10 | 2 | 2026-08-04T08:00:00 | 2026-08-11T17:00:00 | 6.0 DAYS | 0.0 |  | True | 2026-08-04T08:00:00 2026-08-11T17:00:00 | 52 |  | 2 50.0 |  |

Links (from, to, working, name):
- 2026-04-03T00:00:00 2026-04-03T00:00:00  Bank holiday
- 2026-04-06T00:00:00 2026-04-06T00:00:00  Bank holiday
- 2026-05-04T00:00:00 2026-05-04T00:00:00  Contractor shutdown
