# Fenchurch Street, level 4 - office fit-out

Schedule from MS Project XML, 2026-01-12 to 2026-08-11.

## Calendars

- Standard: Mon-Fri 08:00-12:00, 13:00-17:00; Sat-Sun off. Exceptions (off unless hours are given): 2026-04-03 (Bank holiday), 2026-04-06 (Bank holiday), 2026-05-04 (Contractor shutdown).

## Resources

| Resource |
| --- |
| Ruth Enwright |
| Callum Doyle |
| Priya Raman |
| Tom Beswick |
| Marek Kowalczyk |
| Sandra Ilic |
| Dev Chatterjee |
| Bilal Osman |
| Nikki Groves |
| Frank Adeyemi |

## Schedule

| ID | WBS | Task | Type | Duration | Start | Finish | Predecessors | Complete | Baseline start | Baseline finish | Baseline duration | Resources |
| --- | --- | --- | --- | --- | --- | --- | --- | --- | --- | --- | --- | --- |
| 1 | 1 | **Pre-construction** |  | 31d | 2026-01-12 | 2026-02-23 |  |  | 2026-01-12 | 2026-02-23 | 31d |  |
| 2 | 1.1 | Agreement for lease signed | milestone | 0d | 2026-01-12 | 2026-01-12 |  | 100% | 2026-01-12 | 2026-01-12 | 0d |  |
| 3 | 1.2 | Measured survey of existing floor |  | 4d | 2026-01-13 | 2026-01-16 | 2 | 100% | 2026-01-13 | 2026-01-16 | 4d | Priya Raman |
| 4 | 1.3 | Test fits and space plan |  | 8d | 2026-01-19 | 2026-01-28 | 3 | 100% | 2026-01-19 | 2026-01-28 | 8d | Priya Raman; Ruth Enwright [50%] |
| 5 | 1.4 | Client sign-off on layout | milestone | 0d | 2026-01-29 | 2026-01-29 | 4 | 100% | 2026-01-29 | 2026-01-29 | 0d |  |
| 6 | 1.5 | Landlord consent pack |  | 6d | 2026-01-30 | 2026-02-06 | 5 | 100% | 2026-01-30 | 2026-02-06 | 6d | Ruth Enwright |
| 7 | 1.6 | Landlord licence to alter granted | milestone | 0d | 2026-02-23 | 2026-02-23 | 6FS+10d | 100% | 2026-02-23 | 2026-02-23 | 0d |  |
| 8 | 2 | **Design and procurement** |  | 51d | 2026-01-30 | 2026-04-14 |  |  | 2026-01-30 | 2026-04-14 | 51d |  |
| 9 | 2.1 | **Detailed design** |  | 17d | 2026-01-30 | 2026-02-23 |  |  | 2026-01-30 | 2026-02-23 | 17d |  |
| 10 | 2.1.1 | Partition and ceiling drawings |  | 10d | 2026-01-30 | 2026-02-12 | 5 | 100% | 2026-01-30 | 2026-02-12 | 10d | Priya Raman |
| 11 | 2.1.2 | Mechanical and electrical coordination |  | 9d | 2026-01-30 | 2026-02-11 | 5 | 100% | 2026-01-30 | 2026-02-11 | 9d | Tom Beswick |
| 12 | 2.1.3 | Lighting and small power layout |  | 8d | 2026-02-05 | 2026-02-16 | 11SS+4d | 100% | 2026-02-05 | 2026-02-16 | 8d | Tom Beswick |
| 13 | 2.1.4 | Joinery details - tea point and reception |  | 7d | 2026-02-13 | 2026-02-23 | 10 | 100% | 2026-02-13 | 2026-02-23 | 7d | Priya Raman |
| 14 | 2.2 | **Procurement** |  | 39d | 2026-02-17 | 2026-04-14 |  |  | 2026-02-17 | 2026-04-14 | 39d |  |
| 15 | 2.2.1 | Tender issued to three contractors |  | 2d | 2026-02-17 | 2026-02-18 | 10, 12 | 100% | 2026-02-17 | 2026-02-18 | 2d | Ruth Enwright |
| 16 | 2.2.2 | Tender period |  | 12d | 2026-02-19 | 2026-03-06 | 15 | 100% | 2026-02-19 | 2026-03-06 | 12d |  |
| 17 | 2.2.3 | Tender review and levelling |  | 5d | 2026-03-09 | 2026-03-13 | 16 | 100% | 2026-03-09 | 2026-03-13 | 5d | Ruth Enwright; Callum Doyle [50%] |
| 18 | 2.2.4 | Contractor appointed | milestone | 0d | 2026-03-16 | 2026-03-16 | 17 | 100% | 2026-03-16 | 2026-03-16 | 0d |  |
| 19 | 2.2.5 | Bespoke joinery ordered |  | 1d | 2026-03-17 | 2026-03-17 | 13, 18 | 100% | 2026-03-17 | 2026-03-17 | 1d | Callum Doyle |
| 20 | 2.2.6 | Joinery manufacture |  | 18d | 2026-03-18 | 2026-04-14 | 19 | 100% | 2026-03-18 | 2026-04-14 | 18d |  |
| 21 | 2.2.7 | Light fittings ordered |  | 1d | 2026-03-17 | 2026-03-17 | 18 | 100% | 2026-03-17 | 2026-03-17 | 1d | Callum Doyle |
| 22 | 2.2.8 | Light fitting delivery |  | 14d | 2026-03-18 | 2026-04-08 | 21 | 100% | 2026-03-18 | 2026-04-08 | 14d |  |
| 23 | 2.2.9 | Furniture ordered |  | 1d | 2026-03-17 | 2026-03-17 | 18 | 100% | 2026-03-17 | 2026-03-17 | 1d | Ruth Enwright |
| 24 | 3 | **Site works** |  | 60d | 2026-03-17 | 2026-06-11 |  |  | 2026-03-17 | 2026-06-09 | 60d |  |
| 25 | 3.1 | **Enabling works** |  | 11d | 2026-03-17 | 2026-03-31 |  |  | 2026-03-17 | 2026-03-31 | 11d |  |
| 26 | 3.1.1 | Site set up and floor protection |  | 3d | 2026-03-17 | 2026-03-19 | 18 | 100% | 2026-03-17 | 2026-03-19 | 3d | Callum Doyle |
| 27 | 3.1.2 | Strip out partitions and floor finishes |  | 8d | 2026-03-20 | 2026-03-31 | 26 | 100% | 2026-03-20 | 2026-03-31 | 8d | Callum Doyle |
| 28 | 3.1.3 | Remove redundant mechanical and electrical |  | 5d | 2026-03-25 | 2026-03-31 | 27SS+3d | 100% | 2026-03-25 | 2026-03-31 | 5d | Marek Kowalczyk |

Notes:
- 4: Three options priced. Client took option B with the 14-desk bench layout.
- 7: Ten working days with the managing agent. Assume the same on any future floor.
- 11: Existing riser is tighter than the landlord drawings show. Survey photos in the folder.
- 17: Lowest was 9% under the others on M&E. Asked them to reprice - they had missed the sprinkler drops.
- 20: Eight week lead quoted, five achieved. Do not rely on it next time.
- 28: Found live circuits feeding level 5 in the same trunking. Isolated out of hours.

| ID | WBS | Task | Type | Duration | Start | Finish | Predecessors | Complete | Baseline start | Baseline finish | Baseline duration | Resources |
| --- | --- | --- | --- | --- | --- | --- | --- | --- | --- | --- | --- | --- |
| 29 | 3.2 | **First fix** |  | 16d | 2026-04-01 | 2026-04-24 |  |  | 2026-04-01 | 2026-04-24 | 16d |  |
| 30 | 3.2.1 | Builderswork openings and riser alterations |  | 6d | 2026-04-01 | 2026-04-10 | 27 | 100% | 2026-04-01 | 2026-04-10 | 6d | Callum Doyle |
| 31 | 3.2.2 | First fix electrical containment |  | 10d | 2026-04-13 | 2026-04-24 | 30 | 100% | 2026-04-13 | 2026-04-24 | 10d | Marek Kowalczyk |
| 32 | 3.2.3 | Ductwork modifications |  | 5d | 2026-04-13 | 2026-04-17 | 30 | 100% | 2026-04-13 | 2026-04-17 | 5d | Tom Beswick [50%] |
| 33 | 3.2.4 | Sprinkler head relocation |  | 3d | 2026-04-15 | 2026-04-17 | 32SS+2d | 100% | 2026-04-15 | 2026-04-17 | 3d | Marek Kowalczyk [50%] |
| 34 | 3.3 | **Partitions and ceilings** |  | 23d | 2026-04-27 | 2026-05-28 |  |  | 2026-04-27 | 2026-05-28 | 23d |  |
| 35 | 3.3.1 | Metal stud partitions erected |  | 12d | 2026-04-27 | 2026-05-13 | 31 | 100% | 2026-04-27 | 2026-05-13 | 12d | Sandra Ilic |
| 36 | 3.3.2 | Plasterboard, tape and joint |  | 10d | 2026-05-05 | 2026-05-18 | 35SS+5d | 100% | 2026-05-05 | 2026-05-18 | 10d | Sandra Ilic |
| 37 | 3.3.3 | Suspended ceiling grid |  | 8d | 2026-05-19 | 2026-05-28 | 36, 33 | 100% | 2026-05-19 | 2026-05-28 | 8d | Sandra Ilic |
| 38 | 3.3.4 | Acoustic infill to meeting rooms |  | 4d | 2026-05-22 | 2026-05-27 | 37SS+3d | 100% | 2026-05-22 | 2026-05-27 | 4d | Sandra Ilic [50%] |
| 39 | 3.4 | **Second fix** |  | 21d | 2026-05-14 | 2026-06-11 |  |  | 2026-05-14 | 2026-06-09 | 21d |  |
| 40 | 3.4.1 | Second fix electrical |  | 10d | 2026-05-29 | 2026-06-11 | 37 | 90% | 2026-05-27 | 2026-06-09 | 10d | Marek Kowalczyk |
| 41 | 3.4.2 | Light fittings installed |  | 6d | 2026-06-04 | 2026-06-11 | 40SS+4d, 22 | 65% | 2026-06-01 | 2026-06-08 | 6d | Marek Kowalczyk |
| 42 | 3.4.3 | Data cabling and testing |  | 9d | 2026-05-29 | 2026-06-10 | 37 | 55% | 2026-05-25 | 2026-06-04 | 9d | Dev Chatterjee |
| 43 | 3.4.4 | Doors, frames and ironmongery |  | 7d | 2026-05-19 | 2026-05-27 | 36 | 100% | 2026-05-19 | 2026-05-27 | 7d | Sandra Ilic [50%] |
| 44 | 3.4.5 | Tea point plumbing |  | 4d | 2026-05-14 | 2026-05-19 | 35 | 100% | 2026-05-14 | 2026-05-19 | 4d | Marek Kowalczyk [50%] |
| 45 | 4 | **Finishes** |  | 33d | 2026-05-28 | 2026-07-13 |  |  | 2026-05-25 | 2026-07-13 | 33d |  |
| 46 | 4.1 | Mist coat and first coat decoration |  | 6d | 2026-05-28 | 2026-06-04 | 43 | 40% | 2026-05-25 | 2026-06-01 | 6d | Bilal Osman |
| 47 | 4.2 | Final coat decoration |  | 5d | 2026-06-12 | 2026-06-18 | 46, 41 |  | 2026-06-12 | 2026-06-18 | 5d | Bilal Osman |
| 48 | 4.3 | Carpet tiles to open plan |  | 6d | 2026-06-19 | 2026-06-26 | 47 |  | 2026-06-19 | 2026-06-26 | 6d | Nikki Groves |
| 49 | 4.4 | Vinyl to tea point and wet areas |  | 3d | 2026-06-19 | 2026-06-23 | 47 |  | 2026-06-19 | 2026-06-23 | 3d | Nikki Groves |
| 50 | 4.5 | Joinery installation |  | 8d | 2026-06-29 | 2026-07-08 | 20, 48 |  | 2026-06-29 | 2026-07-08 | 8d | Sandra Ilic |
| 51 | 4.6 | Glazed manifestation and signage |  | 3d | 2026-07-09 | 2026-07-13 | 50 |  | 2026-07-09 | 2026-07-13 | 3d | Nikki Groves [50%] |
| 52 | 5 | **Commissioning and handover** |  | 38d | 2026-06-19 | 2026-08-11 |  |  | 2026-06-19 | 2026-08-11 | 38d |  |
| 53 | 5.1 | Mechanical and electrical commissioning |  | 6d | 2026-06-19 | 2026-06-26 | 47, 42 |  | 2026-06-19 | 2026-06-26 | 6d | Marek Kowalczyk; Tom Beswick [50%] |
| 54 | 5.2 | Building control inspection |  | 2d | 2026-06-29 | 2026-06-30 | 53 |  | 2026-06-29 | 2026-06-30 | 2d | Ruth Enwright [50%] |
| 55 | 5.3 | Snagging inspection |  | 3d | 2026-07-14 | 2026-07-16 | 51, 54 |  | 2026-07-14 | 2026-07-16 | 3d | Ruth Enwright; Callum Doyle |
| 56 | 5.4 | Snagging works |  | 8d | 2026-07-17 | 2026-07-28 | 55 |  | 2026-07-17 | 2026-07-28 | 8d | Callum Doyle |
| 57 | 5.5 | Furniture delivery and build |  | 5d | 2026-07-22 | 2026-07-28 | 48, 56SS+3d |  | 2026-07-22 | 2026-07-28 | 5d | Nikki Groves |
| 58 | 5.6 | IT equipment and AV install |  | 6d | 2026-07-24 | 2026-07-31 | 42, 57SS+2d |  | 2026-07-24 | 2026-07-31 | 6d | Dev Chatterjee |
| 59 | 5.7 | Builders clean |  | 2d | 2026-07-29 | 2026-07-30 | 56 |  | 2026-07-29 | 2026-07-30 | 2d | Frank Adeyemi |
| 60 | 5.8 | Client walk-round |  | 1d | 2026-08-03 | 2026-08-03 | 59, 58 |  | 2026-08-03 | 2026-08-03 | 1d | Ruth Enwright |
| 61 | 5.9 | Practical completion | milestone | 0d | 2026-08-04 | 2026-08-04 | 60 |  | 2026-08-04 | 2026-08-04 | 0d |  |
| 62 | 5.10 | O and M manuals and as-built drawings |  | 6d | 2026-08-04 | 2026-08-11 | 61SS |  | 2026-08-04 | 2026-08-11 | 6d | Callum Doyle [50%] |

Notes:
- 38: Client asked for 45dB to the two rooms on the south side after the mock-up.
- 42: Two runs failed Cat6A certification on the first test. Reterminating both ends before we retest.
- 56: Allow eight days. On the last two floors it was six and eleven.
