| id | name | wbs | outline_number | outline_level | start | finish | duration | percent_complete | is_summary | baseline | parent_id | is_milestone | assignments | is_critical |
| --- | --- | --- | --- | --- | --- | --- | --- | --- | --- | --- | --- | --- | --- | --- |
| 1 | Design and approvals | 1 | 1 | 1 | 2026-02-02T00:00:00 | 2026-05-14T00:00:00 | 71.0 DAYS | 100.0 | True | 2026-02-02T00:00:00 2026-05-14T00:00:00 |  |  |  |  |
| 2 | Connection agreement signed | 1.1 | 1.1 | 2 | 2026-02-02T00:00:00 | 2026-02-02T00:00:00 | 0.0 DAYS | 100.0 |  | 2026-02-02T00:00:00 2026-02-02T00:00:00 | 1 | True | 1 100.0 |  |
| 3 | Protection and control design | 1.2 | 1.2 | 2 | 2026-02-03T00:00:00 | 2026-03-09T00:00:00 | 25.0 DAYS | 100.0 |  | 2026-02-03T00:00:00 2026-03-09T00:00:00 | 1 |  | 2 100.0 |  |
| 4 | Design review with the network operator | 1.3 | 1.3 | 2 | 2026-03-10T00:00:00 | 2026-03-23T00:00:00 | 10.0 DAYS | 100.0 |  | 2026-03-10T00:00:00 2026-03-23T00:00:00 | 1 |  | 2 100.0 |  |
| 5 | Design approved | 1.4 | 1.4 | 2 | 2026-03-24T00:00:00 | 2026-03-24T00:00:00 | 0.0 DAYS | 100.0 |  | 2026-03-24T00:00:00 2026-03-24T00:00:00 | 1 | True | 1 100.0 |  |
| 6 | Outage application submitted | 1.5 | 1.5 | 2 | 2026-03-25T00:00:00 | 2026-03-27T00:00:00 | 3.0 DAYS | 100.0 |  | 2026-03-25T00:00:00 2026-03-27T00:00:00 | 1 |  | 1 100.0 |  |
| 7 | Outage window confirmed | 1.6 | 1.6 | 2 | 2026-05-14T00:00:00 | 2026-05-14T00:00:00 | 0.0 DAYS | 100.0 |  | 2026-05-14T00:00:00 2026-05-14T00:00:00 | 1 | True | 1 100.0 |  |
| 8 | Long-lead procurement | 2 | 2 | 1 | 2026-03-25T00:00:00 | 2026-09-01T00:00:00 | 110.0 DAYS | 79.0 | True | 2026-03-25T00:00:00 2026-09-01T00:00:00 |  |  |  | True |
| 9 | Circuit breaker ordered | 2.1 | 2.1 | 2 | 2026-03-25T00:00:00 | 2026-03-31T00:00:00 | 5.0 DAYS | 100.0 |  | 2026-03-25T00:00:00 2026-03-31T00:00:00 | 8 |  | 3 100.0 |  |
| 10 | Circuit breaker manufacture | 2.2 | 2.2 | 2 | 2026-04-01T00:00:00 | 2026-08-10T00:00:00 | 90.0 DAYS | 78.0 |  | 2026-04-01T00:00:00 2026-08-10T00:00:00 | 8 |  | 3 100.0 |  |
| 11 | Factory acceptance test | 2.3 | 2.3 | 2 | 2026-08-11T00:00:00 | 2026-08-14T00:00:00 | 4.0 DAYS | 0.0 |  | 2026-08-11T00:00:00 2026-08-14T00:00:00 | 8 |  | 3 100.0 |  |
| 12 | Circuit breaker delivered to site | 2.4 | 2.4 | 2 | 2026-09-01T00:00:00 | 2026-09-01T00:00:00 | 0.0 DAYS | 0.0 |  | 2026-09-01T00:00:00 2026-09-01T00:00:00 | 8 | True | 3 100.0 | True |
| 13 | Protection panels ordered | 2.5 | 2.5 | 2 | 2026-03-25T00:00:00 | 2026-03-31T00:00:00 | 5.0 DAYS | 100.0 |  | 2026-03-25T00:00:00 2026-03-31T00:00:00 | 8 |  | 3 100.0 |  |
| 14 | Protection panels built | 2.6 | 2.6 | 2 | 2026-04-01T00:00:00 | 2026-06-22T00:00:00 | 55.0 DAYS | 85.0 |  | 2026-04-01T00:00:00 2026-06-22T00:00:00 | 8 |  | 3 100.0 |  |
| 15 | Protection panels delivered | 2.7 | 2.7 | 2 | 2026-06-30T00:00:00 | 2026-06-30T00:00:00 | 0.0 DAYS | 0.0 |  | 2026-06-30T00:00:00 2026-06-30T00:00:00 | 8 | True | 3 100.0 |  |
| 16 | Civil works | 3 | 3 | 1 | 2026-03-25T00:00:00 | 2026-05-22T00:00:00 | 40.0 DAYS | 100.0 | True | 2026-03-25T00:00:00 2026-05-22T00:00:00 |  |  |  |  |
| 17 | Site setup and temporary access | 3.1 | 3.1 | 2 | 2026-03-25T00:00:00 | 2026-04-07T00:00:00 | 8.0 DAYS | 100.0 |  | 2026-03-25T00:00:00 2026-04-07T00:00:00 | 16 |  | 4 100.0 |  |
| 18 | Excavation for plinths | 3.2 | 3.2 | 2 | 2026-04-08T00:00:00 | 2026-04-21T00:00:00 | 10.0 DAYS | 100.0 |  | 2026-04-08T00:00:00 2026-04-21T00:00:00 | 16 |  | 4 100.0 |  |
| 19 | Reinforcement and shuttering | 3.3 | 3.3 | 2 | 2026-04-22T00:00:00 | 2026-05-01T00:00:00 | 8.0 DAYS | 100.0 |  | 2026-04-22T00:00:00 2026-05-01T00:00:00 | 16 |  | 4 100.0 |  |
| 20 | Concrete poured | 3.4 | 3.4 | 2 | 2026-05-05T00:00:00 | 2026-05-07T00:00:00 | 3.0 DAYS | 100.0 |  | 2026-05-05T00:00:00 2026-05-07T00:00:00 | 16 |  | 4 100.0 |  |
| 21 | Concrete cure | 3.5 | 3.5 | 2 | 2026-05-08T00:00:00 | 2026-05-21T00:00:00 | 10.0 DAYS | 100.0 |  | 2026-05-08T00:00:00 2026-05-21T00:00:00 | 16 |  | 4 100.0 |  |
| 22 | Cable trench and ducts | 3.6 | 3.6 | 2 | 2026-04-22T00:00:00 | 2026-05-08T00:00:00 | 12.0 DAYS | 100.0 |  | 2026-04-22T00:00:00 2026-05-08T00:00:00 | 16 |  | 5 100.0 |  |
| 23 | Earth grid extension | 3.7 | 3.7 | 2 | 2026-05-11T00:00:00 | 2026-05-21T00:00:00 | 9.0 DAYS | 100.0 |  | 2026-05-11T00:00:00 2026-05-21T00:00:00 | 16 |  | 5 100.0 |  |
| 24 | Civils complete | 3.8 | 3.8 | 2 | 2026-05-22T00:00:00 | 2026-05-22T00:00:00 | 0.0 DAYS | 100.0 |  | 2026-05-22T00:00:00 2026-05-22T00:00:00 | 16 | True | 4 100.0 |  |
| 25 | Plant installation | 4 | 4 | 1 | 2026-05-26T00:00:00 | 2026-10-20T00:00:00 | 105.0 DAYS | 23.0 | True | 2026-05-26T00:00:00 2026-10-20T00:00:00 |  |  |  | True |
| 26 | Steelwork erected | 4.1 | 4.1 | 2 | 2026-05-26T00:00:00 | 2026-06-03T00:00:00 | 7.0 DAYS | 100.0 |  | 2026-05-26T00:00:00 2026-06-03T00:00:00 | 25 |  | 6 100.0 |  |
| 27 | Circuit breaker set down and aligned | 4.2 | 4.2 | 2 | 2026-09-02T00:00:00 | 2026-09-08T00:00:00 | 5.0 DAYS | 0.0 |  | 2026-09-02T00:00:00 2026-09-08T00:00:00 | 25 |  | 6 100.0 | True |
| 28 | Disconnectors and CTs installed | 4.3 | 4.3 | 2 | 2026-09-09T00:00:00 | 2026-09-18T00:00:00 | 8.0 DAYS | 0.0 |  | 2026-09-09T00:00:00 2026-09-18T00:00:00 | 25 |  | 6 100.0 | True |
| 29 | Busbar connections made off | 4.4 | 4.4 | 2 | 2026-09-21T00:00:00 | 2026-09-28T00:00:00 | 6.0 DAYS | 0.0 |  | 2026-09-21T00:00:00 2026-09-28T00:00:00 | 25 |  | 6 100.0 |  |
| 30 | HV cable pulled | 4.5 | 4.5 | 2 | 2026-06-04T00:00:00 | 2026-06-16T00:00:00 | 9.0 DAYS | 100.0 |  | 2026-06-04T00:00:00 2026-06-16T00:00:00 | 25 |  | 7 100.0 |  |
| 31 | HV cable terminated | 4.6 | 4.6 | 2 | 2026-09-29T00:00:00 | 2026-10-07T00:00:00 | 7.0 DAYS | 0.0 |  | 2026-09-29T00:00:00 2026-10-07T00:00:00 | 25 |  | 7 100.0 |  |
| 32 | Protection panels installed | 4.7 | 4.7 | 2 | 2026-07-01T00:00:00 | 2026-07-08T00:00:00 | 6.0 DAYS | 0.0 |  | 2026-07-01T00:00:00 2026-07-08T00:00:00 | 25 |  | 8 100.0 |  |
| 33 | Multicore cabling and glanding | 4.8 | 4.8 | 2 | 2026-09-21T00:00:00 | 2026-10-06T00:00:00 | 12.0 DAYS | 0.0 |  | 2026-09-21T00:00:00 2026-10-06T00:00:00 | 25 |  | 8 100.0 | True |
| 34 | Secondary wiring terminated | 4.9 | 4.9 | 2 | 2026-10-07T00:00:00 | 2026-10-20T00:00:00 | 10.0 DAYS | 0.0 |  | 2026-10-07T00:00:00 2026-10-20T00:00:00 | 25 |  | 8 100.0 | True |
| 35 | Testing and commissioning | 5 | 5 | 1 | 2026-10-21T00:00:00 | 2026-12-03T00:00:00 | 32.0 DAYS | 0.0 | True | 2026-10-21T00:00:00 2026-12-03T00:00:00 |  |  |  | True |
| 36 | Primary injection testing | 5.1 | 5.1 | 2 | 2026-10-21T00:00:00 | 2026-10-28T00:00:00 | 6.0 DAYS | 0.0 |  | 2026-10-21T00:00:00 2026-10-28T00:00:00 | 35 |  | 9 100.0 | True |
| 37 | Secondary injection testing | 5.2 | 5.2 | 2 | 2026-10-29T00:00:00 | 2026-11-09T00:00:00 | 8.0 DAYS | 0.0 |  | 2026-10-29T00:00:00 2026-11-09T00:00:00 | 35 |  | 9 100.0 | True |
| 38 | Protection settings applied | 5.3 | 5.3 | 2 | 2026-11-10T00:00:00 | 2026-11-13T00:00:00 | 4.0 DAYS | 0.0 |  | 2026-11-10T00:00:00 2026-11-13T00:00:00 | 35 |  | 9 100.0 | True |
| 39 | Interlock and trip testing | 5.4 | 5.4 | 2 | 2026-11-16T00:00:00 | 2026-11-20T00:00:00 | 5.0 DAYS | 0.0 |  | 2026-11-16T00:00:00 2026-11-20T00:00:00 | 35 |  | 9 100.0 | True |
| 40 | SCADA point-to-point | 5.5 | 5.5 | 2 | 2026-11-23T00:00:00 | 2026-11-30T00:00:00 | 6.0 DAYS | 0.0 |  | 2026-11-23T00:00:00 2026-11-30T00:00:00 | 35 |  | 10 100.0 | True |
| 41 | Pre-energisation inspection | 5.6 | 5.6 | 2 | 2026-12-01T00:00:00 | 2026-12-03T00:00:00 | 3.0 DAYS | 0.0 |  | 2026-12-01T00:00:00 2026-12-03T00:00:00 | 35 |  | 10 100.0 | True |
| 42 | Outage and energisation | 6 | 6 | 1 | 2026-12-04T00:00:00 | 2026-12-21T00:00:00 | 12.0 DAYS | 0.0 | True | 2026-12-04T00:00:00 2026-12-21T00:00:00 |  |  |  | True |
| 43 | Outage starts | 6.1 | 6.1 | 2 | 2026-12-04T00:00:00 | 2026-12-04T00:00:00 | 0.0 DAYS | 0.0 |  | 2026-12-04T00:00:00 2026-12-04T00:00:00 | 42 | True | 1 100.0 | True |
| 44 | Isolation and earthing | 6.2 | 6.2 | 2 | 2026-12-07T00:00:00 | 2026-12-07T00:00:00 | 1.0 DAYS | 0.0 |  | 2026-12-07T00:00:00 2026-12-07T00:00:00 | 42 |  | 7 100.0 | True |
| 45 | Busbar tie-in | 6.3 | 6.3 | 2 | 2026-12-08T00:00:00 | 2026-12-10T00:00:00 | 3.0 DAYS | 0.0 |  | 2026-12-08T00:00:00 2026-12-10T00:00:00 | 42 |  | 6 100.0 | True |
| 46 | Final connections and checks | 6.4 | 6.4 | 2 | 2026-12-11T00:00:00 | 2026-12-14T00:00:00 | 2.0 DAYS | 0.0 |  | 2026-12-11T00:00:00 2026-12-14T00:00:00 | 42 |  | 9 100.0 | True |
| 47 | Circuit energised | 6.5 | 6.5 | 2 | 2026-12-15T00:00:00 | 2026-12-15T00:00:00 | 0.0 DAYS | 0.0 |  | 2026-12-15T00:00:00 2026-12-15T00:00:00 | 42 | True | 1 100.0 | True |
| 48 | Outage ends | 6.6 | 6.6 | 2 | 2026-12-16T00:00:00 | 2026-12-16T00:00:00 | 0.0 DAYS | 0.0 |  | 2026-12-16T00:00:00 2026-12-16T00:00:00 | 42 | True | 1 100.0 | True |
| 49 | 24-hour soak | 6.7 | 6.7 | 2 | 2026-12-17T00:00:00 | 2026-12-18T00:00:00 | 2.0 DAYS | 0.0 |  | 2026-12-17T00:00:00 2026-12-18T00:00:00 | 42 |  | 10 100.0 | True |
| 50 | Handover to operations | 6.8 | 6.8 | 2 | 2026-12-21T00:00:00 | 2026-12-21T00:00:00 | 0.0 DAYS | 0.0 |  | 2026-12-21T00:00:00 2026-12-21T00:00:00 | 42 | True | 1 100.0 | True |

Links (from, to, working, name):
- 2026-04-03T00:00:00 2026-04-03T00:00:00 
- 2026-04-06T00:00:00 2026-04-06T00:00:00 
- 2026-05-04T00:00:00 2026-05-04T00:00:00 
- 2026-05-25T00:00:00 2026-05-25T00:00:00 
- 2026-08-31T00:00:00 2026-08-31T00:00:00 
- 2026-12-25T00:00:00 2026-12-25T00:00:00 
