# Wraysbury substation - 132 kV bay 4 extension

Schedule from MS Project MPX, 2026-02-02 to 2026-12-21.

## Calendars

- Standard: Mon-Fri 08:00 am-12:00 pm, 01:00 pm-05:00 pm; Sat-Sun off. Exceptions (off unless hours are given): 2026-04-03, 2026-04-06, 2026-05-04, 2026-05-25, 2026-08-31.

## Resources

| Resource |
| --- |
| Hazel Okonjo |
| Rob Pemberton |
| Sian Marsh |
| Dmitri Yalowitz |
| Callum Reid |
| Nina Achebe |
| Gordon Laing |
| Priya Venkatesh |
| Marek Sobczak |
| Ellen Truscott |

## Schedule

| ID | WBS | Task | Type | Duration | Start | Finish | Predecessors | Complete | Baseline start | Baseline finish | Baseline duration | Resources |
| --- | --- | --- | --- | --- | --- | --- | --- | --- | --- | --- | --- | --- |
| 1 | 1 | **Design and approvals** |  | 71d | 2026-02-02 | 2026-05-14 |  | 100% | 2026-02-02 | 2026-05-14 | 71d |  |
| 2 | 1.1 | Connection agreement signed | milestone | 0d | 2026-02-02 | 2026-02-02 |  | 100% | 2026-02-02 | 2026-02-02 | 0d | Hazel Okonjo |
| 3 | 1.2 | Protection and control design |  | 25d | 2026-02-03 | 2026-03-09 | 2 | 100% | 2026-02-03 | 2026-03-09 | 25d | Rob Pemberton |
| 4 | 1.3 | Design review with the network operator |  | 10d | 2026-03-10 | 2026-03-23 | 3 | 100% | 2026-03-10 | 2026-03-23 | 10d | Rob Pemberton |
| 5 | 1.4 | Design approved | milestone | 0d | 2026-03-24 | 2026-03-24 | 4 | 100% | 2026-03-24 | 2026-03-24 | 0d | Hazel Okonjo |
| 6 | 1.5 | Outage application submitted |  | 3d | 2026-03-25 | 2026-03-27 | 5 | 100% | 2026-03-25 | 2026-03-27 | 3d | Hazel Okonjo |
| 7 | 1.6 | Outage window confirmed | milestone | 0d | 2026-05-14 | 2026-05-14 | 6FS+30d | 100% | 2026-05-14 | 2026-05-14 | 0d | Hazel Okonjo |
| 8 | 2 | **Long-lead procurement** |  | 110d | 2026-03-25 | 2026-09-01 |  | 79% | 2026-03-25 | 2026-09-01 | 110d |  |
| 9 | 2.1 | Circuit breaker ordered |  | 5d | 2026-03-25 | 2026-03-31 | 5 | 100% | 2026-03-25 | 2026-03-31 | 5d | Sian Marsh |
| 10 | 2.2 | Circuit breaker manufacture |  | 90d | 2026-04-01 | 2026-08-10 | 9 | 78% | 2026-04-01 | 2026-08-10 | 90d | Sian Marsh |
| 11 | 2.3 | Factory acceptance test |  | 4d | 2026-08-11 | 2026-08-14 | 10 |  | 2026-08-11 | 2026-08-14 | 4d | Sian Marsh |
| 12 | 2.4 | Circuit breaker delivered to site | milestone | 0d | 2026-09-01 | 2026-09-01 | 11FS+10d |  | 2026-09-01 | 2026-09-01 | 0d | Sian Marsh |
| 13 | 2.5 | Protection panels ordered |  | 5d | 2026-03-25 | 2026-03-31 | 5 | 100% | 2026-03-25 | 2026-03-31 | 5d | Sian Marsh |
| 14 | 2.6 | Protection panels built |  | 55d | 2026-04-01 | 2026-06-22 | 13 | 85% | 2026-04-01 | 2026-06-22 | 55d | Sian Marsh |
| 15 | 2.7 | Protection panels delivered | milestone | 0d | 2026-06-30 | 2026-06-30 | 14FS+5d |  | 2026-06-30 | 2026-06-30 | 0d | Sian Marsh |
| 16 | 3 | **Civil works** |  | 40d | 2026-03-25 | 2026-05-22 |  | 100% | 2026-03-25 | 2026-05-22 | 40d |  |
| 17 | 3.1 | Site setup and temporary access |  | 8d | 2026-03-25 | 2026-04-07 | 5 | 100% | 2026-03-25 | 2026-04-07 | 8d | Dmitri Yalowitz |
| 18 | 3.2 | Excavation for plinths |  | 10d | 2026-04-08 | 2026-04-21 | 17 | 100% | 2026-04-08 | 2026-04-21 | 10d | Dmitri Yalowitz |
| 19 | 3.3 | Reinforcement and shuttering |  | 8d | 2026-04-22 | 2026-05-01 | 18 | 100% | 2026-04-22 | 2026-05-01 | 8d | Dmitri Yalowitz |
| 20 | 3.4 | Concrete poured |  | 3d | 2026-05-05 | 2026-05-07 | 19 | 100% | 2026-05-05 | 2026-05-07 | 3d | Dmitri Yalowitz |
| 21 | 3.5 | Concrete cure |  | 10d | 2026-05-08 | 2026-05-21 | 20 | 100% | 2026-05-08 | 2026-05-21 | 10d | Dmitri Yalowitz |
| 22 | 3.6 | Cable trench and ducts |  | 12d | 2026-04-22 | 2026-05-08 | 18 | 100% | 2026-04-22 | 2026-05-08 | 12d | Callum Reid |
| 23 | 3.7 | Earth grid extension |  | 9d | 2026-05-11 | 2026-05-21 | 22 | 100% | 2026-05-11 | 2026-05-21 | 9d | Callum Reid |
| 24 | 3.8 | Civils complete | milestone | 0d | 2026-05-22 | 2026-05-22 | 21, 23 | 100% | 2026-05-22 | 2026-05-22 | 0d | Dmitri Yalowitz |

| ID | WBS | Task | Type | Duration | Start | Finish | Predecessors | Complete | Baseline start | Baseline finish | Baseline duration | Resources |
| --- | --- | --- | --- | --- | --- | --- | --- | --- | --- | --- | --- | --- |
| 25 | 4 | **Plant installation** |  | 105d | 2026-05-26 | 2026-10-20 |  | 23% | 2026-05-26 | 2026-10-20 | 105d |  |
| 26 | 4.1 | Steelwork erected |  | 7d | 2026-05-26 | 2026-06-03 | 24 | 100% | 2026-05-26 | 2026-06-03 | 7d | Nina Achebe |
| 27 | 4.2 | Circuit breaker set down and aligned |  | 5d | 2026-09-02 | 2026-09-08 | 26, 12 |  | 2026-09-02 | 2026-09-08 | 5d | Nina Achebe |
| 28 | 4.3 | Disconnectors and CTs installed |  | 8d | 2026-09-09 | 2026-09-18 | 27 |  | 2026-09-09 | 2026-09-18 | 8d | Nina Achebe |
| 29 | 4.4 | Busbar connections made off |  | 6d | 2026-09-21 | 2026-09-28 | 28 |  | 2026-09-21 | 2026-09-28 | 6d | Nina Achebe |
| 30 | 4.5 | HV cable pulled |  | 9d | 2026-06-04 | 2026-06-16 | 23, 26 | 100% | 2026-06-04 | 2026-06-16 | 9d | Gordon Laing |
| 31 | 4.6 | HV cable terminated |  | 7d | 2026-09-29 | 2026-10-07 | 30, 29 |  | 2026-09-29 | 2026-10-07 | 7d | Gordon Laing |
| 32 | 4.7 | Protection panels installed |  | 6d | 2026-07-01 | 2026-07-08 | 15, 24 |  | 2026-07-01 | 2026-07-08 | 6d | Priya Venkatesh |
| 33 | 4.8 | Multicore cabling and glanding |  | 12d | 2026-09-21 | 2026-10-06 | 32, 28 |  | 2026-09-21 | 2026-10-06 | 12d | Priya Venkatesh |
| 34 | 4.9 | Secondary wiring terminated |  | 10d | 2026-10-07 | 2026-10-20 | 33 |  | 2026-10-07 | 2026-10-20 | 10d | Priya Venkatesh |
| 35 | 5 | **Testing and commissioning** |  | 32d | 2026-10-21 | 2026-12-03 |  |  | 2026-10-21 | 2026-12-03 | 32d |  |
| 36 | 5.1 | Primary injection testing |  | 6d | 2026-10-21 | 2026-10-28 | 31, 34 |  | 2026-10-21 | 2026-10-28 | 6d | Marek Sobczak |
| 37 | 5.2 | Secondary injection testing |  | 8d | 2026-10-29 | 2026-11-09 | 36 |  | 2026-10-29 | 2026-11-09 | 8d | Marek Sobczak |
| 38 | 5.3 | Protection settings applied |  | 4d | 2026-11-10 | 2026-11-13 | 37 |  | 2026-11-10 | 2026-11-13 | 4d | Marek Sobczak |
| 39 | 5.4 | Interlock and trip testing |  | 5d | 2026-11-16 | 2026-11-20 | 38 |  | 2026-11-16 | 2026-11-20 | 5d | Marek Sobczak |
| 40 | 5.5 | SCADA point-to-point |  | 6d | 2026-11-23 | 2026-11-30 | 39 |  | 2026-11-23 | 2026-11-30 | 6d | Ellen Truscott |
| 41 | 5.6 | Pre-energisation inspection |  | 3d | 2026-12-01 | 2026-12-03 | 40 |  | 2026-12-01 | 2026-12-03 | 3d | Ellen Truscott |
| 42 | 6 | **Outage and energisation** |  | 12d | 2026-12-04 | 2026-12-21 |  |  | 2026-12-04 | 2026-12-21 | 12d |  |
| 43 | 6.1 | Outage starts | milestone | 0d | 2026-12-04 | 2026-12-04 | 41, 7 |  | 2026-12-04 | 2026-12-04 | 0d | Hazel Okonjo |
| 44 | 6.2 | Isolation and earthing |  | 1d | 2026-12-07 | 2026-12-07 | 43 |  | 2026-12-07 | 2026-12-07 | 1d | Gordon Laing |
| 45 | 6.3 | Busbar tie-in |  | 3d | 2026-12-08 | 2026-12-10 | 44 |  | 2026-12-08 | 2026-12-10 | 3d | Nina Achebe |
| 46 | 6.4 | Final connections and checks |  | 2d | 2026-12-11 | 2026-12-14 | 45 |  | 2026-12-11 | 2026-12-14 | 2d | Marek Sobczak |
| 47 | 6.5 | Circuit energised | milestone | 0d | 2026-12-15 | 2026-12-15 | 46 |  | 2026-12-15 | 2026-12-15 | 0d | Hazel Okonjo |
| 48 | 6.6 | Outage ends | milestone | 0d | 2026-12-16 | 2026-12-16 | 47 |  | 2026-12-16 | 2026-12-16 | 0d | Hazel Okonjo |
| 49 | 6.7 | 24-hour soak |  | 2d | 2026-12-17 | 2026-12-18 | 48 |  | 2026-12-17 | 2026-12-18 | 2d | Ellen Truscott |
| 50 | 6.8 | Handover to operations | milestone | 0d | 2026-12-21 | 2026-12-21 | 49 |  | 2026-12-21 | 2026-12-21 | 0d | Hazel Okonjo |
