| id | name | wbs | outline_number | outline_level | start | finish | duration | percent_complete | is_summary | is_critical | baseline | parent_id | is_milestone | assignments | notes |
| --- | --- | --- | --- | --- | --- | --- | --- | --- | --- | --- | --- | --- | --- | --- | --- |
| 1 | Подготовительный период | 1 | 1 | 1 | 2026-03-02T08:00:00 | 2026-03-24T17:00:00 | 17.0 DAYS | 0.0 | True | True | 2026-03-02T08:00:00 2026-03-24T17:00:00 |  |  |  |  |
| 2 | Передача площадки подрядчику | 1.1 | 1.1 | 2 | 2026-03-02T08:00:00 | 2026-03-02T17:00:00 | 0.0 DAYS | 100.0 |  | True | 2026-03-02T08:00:00 2026-03-02T17:00:00 | 1 | True |  |  |
| 3 | Геодезическая разбивочная основа | 1.2 | 1.2 | 2 | 2026-03-03T08:00:00 | 2026-03-10T17:00:00 | 6.0 DAYS | 100.0 |  |  | 2026-03-03T08:00:00 2026-03-10T17:00:00 | 1 |  | 3 100.0 |  |
| 4 | Устройство временной объездной дороги | 1.3 | 1.3 | 2 | 2026-03-03T08:00:00 | 2026-03-20T17:00:00 | 14.0 DAYS | 100.0 |  | True | 2026-03-03T08:00:00 2026-03-20T17:00:00 | 1 |  | 8 100.0 | Согласовали с ГИБДД схему на весь период работ, знаки выставлены. |
| 5 | Вынос сетей связи из зоны работ | 1.4 | 1.4 | 2 | 2026-03-11T08:00:00 | 2026-03-24T17:00:00 | 10.0 DAYS | 100.0 |  |  | 2026-03-11T08:00:00 2026-03-24T17:00:00 | 1 |  | 4 50.0 |  |
| 6 | Ограждение и бытовой городок | 1.5 | 1.5 | 2 | 2026-03-04T08:00:00 | 2026-03-10T17:00:00 | 5.0 DAYS | 100.0 |  |  | 2026-03-04T08:00:00 2026-03-10T17:00:00 | 1 |  | 8 50.0 |  |
| 7 | Движение пущено по объезду | 1.6 | 1.6 | 2 | 2026-03-23T08:00:00 | 2026-03-23T17:00:00 | 0.0 DAYS | 100.0 |  | True | 2026-03-23T08:00:00 2026-03-23T17:00:00 | 1 | True |  |  |
| 8 | Опоры | 2 | 2 | 1 | 2026-03-11T08:00:00 | 2026-06-26T17:00:00 | 75.0 DAYS | 0.0 | True | True | 2026-03-11T08:00:00 2026-06-26T17:00:00 |  |  |  |  |
| 9 | Опора №1 (береговая) | 2.1 | 2.1 | 2 | 2026-03-24T08:00:00 | 2026-05-28T17:00:00 | 46.0 DAYS | 0.0 | True |  | 2026-03-24T08:00:00 2026-05-28T17:00:00 | 8 |  |  |  |
| 10 | Разработка котлована опоры №1 | 2.1.1 | 2.1.1 | 3 | 2026-03-24T08:00:00 | 2026-04-02T17:00:00 | 8.0 DAYS | 100.0 |  |  | 2026-03-24T08:00:00 2026-04-02T17:00:00 | 9 |  | 6 100.0 |  |
| 11 | Свайное поле опоры №1 | 2.1.2 | 2.1.2 | 3 | 2026-04-03T08:00:00 | 2026-04-24T17:00:00 | 16.0 DAYS | 100.0 |  |  | 2026-04-03T08:00:00 2026-04-24T17:00:00 | 9 |  | 6 100.0 | Три сваи ушли ниже проектной отметки, добрали бетоном по согласованию с автором проекта. |
| 12 | Ростверк опоры №1 | 2.1.3 | 2.1.3 | 3 | 2026-04-27T08:00:00 | 2026-05-12T17:00:00 | 10.0 DAYS | 100.0 |  |  | 2026-04-27T08:00:00 2026-05-12T17:00:00 | 9 |  | 5 100.0 |  |
| 13 | Тело опоры №1 | 2.1.4 | 2.1.4 | 3 | 2026-05-13T08:00:00 | 2026-05-28T17:00:00 | 12.0 DAYS | 100.0 |  |  | 2026-05-13T08:00:00 2026-05-28T17:00:00 | 9 |  | 5 100.0 |  |
| 14 | Опора №2 (русловая) | 2.2 | 2.2 | 2 | 2026-03-24T08:00:00 | 2026-06-25T17:00:00 | 65.0 DAYS | 0.0 | True | True | 2026-03-24T08:00:00 2026-06-18T17:00:00 | 8 |  |  |  |
| 15 | Устройство островка и шпунтового ограждения | 2.2.1 | 2.2.1 | 3 | 2026-03-24T08:00:00 | 2026-04-08T17:00:00 | 12.0 DAYS | 100.0 |  | True | 2026-03-24T08:00:00 2026-04-08T17:00:00 | 14 |  | 6 100.0 | Уровень воды в мае держался выше графика, шпунт добивали дважды. |
| 16 | Разработка котлована опоры №2 | 2.2.2 | 2.2.2 | 3 | 2026-04-09T08:00:00 | 2026-04-21T17:00:00 | 9.0 DAYS | 100.0 |  | True | 2026-04-09T08:00:00 2026-04-21T17:00:00 | 14 |  | 6 100.0 |  |
| 17 | Свайное поле опоры №2 | 2.2.3 | 2.2.3 | 3 | 2026-04-22T08:00:00 | 2026-05-19T17:00:00 | 18.0 DAYS | 100.0 |  | True | 2026-04-22T08:00:00 2026-05-19T17:00:00 | 14 |  | 6 100.0 |  |
| 18 | Ростверк опоры №2 | 2.2.4 | 2.2.4 | 3 | 2026-05-20T08:00:00 | 2026-06-04T17:00:00 | 12.0 DAYS | 100.0 |  | True | 2026-05-20T08:00:00 2026-06-04T17:00:00 | 14 |  | 5 100.0 |  |
| 19 | Тело опоры №2 | 2.2.5 | 2.2.5 | 3 | 2026-06-05T08:00:00 | 2026-06-25T17:00:00 | 14.0 DAYS | 90.0 |  | True | 2026-05-29T08:00:00 2026-06-18T17:00:00 | 14 |  | 5 100.0 |  |
| 20 | Опора №3 (береговая) | 2.3 | 2.3 | 2 | 2026-03-11T08:00:00 | 2026-05-12T17:00:00 | 43.0 DAYS | 0.0 | True |  | 2026-03-11T08:00:00 2026-05-12T17:00:00 | 8 |  |  |  |
| 21 | Разработка котлована опоры №3 | 2.3.1 | 2.3.1 | 3 | 2026-03-11T08:00:00 | 2026-03-19T17:00:00 | 7.0 DAYS | 100.0 |  |  | 2026-03-11T08:00:00 2026-03-19T17:00:00 | 20 |  | 6 50.0 |  |
| 22 | Свайное поле опоры №3 | 2.3.2 | 2.3.2 | 3 | 2026-03-20T08:00:00 | 2026-04-09T17:00:00 | 15.0 DAYS | 100.0 |  |  | 2026-03-20T08:00:00 2026-04-09T17:00:00 | 20 |  | 6 50.0 |  |
| 23 | Ростверк опоры №3 | 2.3.3 | 2.3.3 | 3 | 2026-04-10T08:00:00 | 2026-04-23T17:00:00 | 10.0 DAYS | 100.0 |  |  | 2026-04-10T08:00:00 2026-04-23T17:00:00 | 20 |  | 5 50.0 |  |
| 24 | Тело опоры №3 | 2.3.4 | 2.3.4 | 3 | 2026-04-24T08:00:00 | 2026-05-12T17:00:00 | 11.0 DAYS | 100.0 |  |  | 2026-04-24T08:00:00 2026-05-12T17:00:00 | 20 |  | 5 50.0 |  |
| 25 | Все опоры забетонированы | 2.4 | 2.4 | 2 | 2026-06-26T08:00:00 | 2026-06-26T17:00:00 | 0.0 DAYS | 0.0 |  |  | 2026-06-26T08:00:00 2026-06-26T17:00:00 | 8 | True |  |  |
| 26 | Пролётное строение | 3 | 3 | 1 | 2026-04-27T08:00:00 | 2026-08-24T17:00:00 | 83.0 DAYS | 0.0 | True | True | 2026-04-27T08:00:00 2026-08-24T17:00:00 |  |  |  |  |
| 27 | Изготовление балок на заводе | 3.1 | 3.1 | 2 | 2026-04-27T08:00:00 | 2026-06-09T17:00:00 | 30.0 DAYS | 100.0 |  |  | 2026-04-27T08:00:00 2026-06-09T17:00:00 | 26 |  |  | Завод отгружает партиями по четыре балки, всего три партии. |
| 28 | Доставка балок на площадку | 3.2 | 3.2 | 2 | 2026-06-10T08:00:00 | 2026-06-22T17:00:00 | 8.0 DAYS | 100.0 |  |  | 2026-06-10T08:00:00 2026-06-22T17:00:00 | 26 |  | 8 50.0 |  |
| 29 | Монтаж балок пролёта 1-2 | 3.3 | 3.3 | 2 | 2026-06-26T08:00:00 | 2026-07-08T17:00:00 | 9.0 DAYS | 45.0 |  | True | 2026-06-18T08:00:00 2026-06-30T17:00:00 | 26 |  | 7 100.0 | Кран стоит на левом берегу, перестановка на правый занимает два дня - учтено в монтаже пролёта 2-3. |
| 30 | Монтаж балок пролёта 2-3 | 3.4 | 3.4 | 2 | 2026-07-13T08:00:00 | 2026-07-23T17:00:00 | 9.0 DAYS | 0.0 |  | True | 2026-07-13T08:00:00 2026-07-23T17:00:00 | 26 |  | 7 100.0 |  |
| 31 | Омоноличивание стыков | 3.5 | 3.5 | 2 | 2026-07-24T08:00:00 | 2026-08-04T17:00:00 | 8.0 DAYS | 0.0 |  | True | 2026-07-24T08:00:00 2026-08-04T17:00:00 | 26 |  | 5 100.0 |  |
| 32 | Устройство плиты проезжей части | 3.6 | 3.6 | 2 | 2026-08-05T08:00:00 | 2026-08-24T17:00:00 | 14.0 DAYS | 0.0 |  | True | 2026-08-05T08:00:00 2026-08-24T17:00:00 | 26 |  | 5 100.0 |  |
| 33 | Мостовое полотно | 4 | 4 | 1 | 2026-08-25T08:00:00 | 2026-09-24T17:00:00 | 23.0 DAYS | 0.0 | True | True | 2026-08-25T08:00:00 2026-09-24T17:00:00 |  |  |  |  |
| 34 | Гидроизоляция плиты | 4.1 | 4.1 | 2 | 2026-08-25T08:00:00 | 2026-09-02T17:00:00 | 7.0 DAYS | 0.0 |  | True | 2026-08-25T08:00:00 2026-09-02T17:00:00 | 33 |  | 9 100.0 |  |
| 35 | Защитный слой | 4.2 | 4.2 | 2 | 2026-09-03T08:00:00 | 2026-09-09T17:00:00 | 5.0 DAYS | 0.0 |  | True | 2026-09-03T08:00:00 2026-09-09T17:00:00 | 33 |  | 9 100.0 |  |
| 36 | Деформационные швы | 4.3 | 4.3 | 2 | 2026-09-08T08:00:00 | 2026-09-15T17:00:00 | 6.0 DAYS | 0.0 |  | True | 2026-09-08T08:00:00 2026-09-15T17:00:00 | 33 |  | 7 50.0 |  |
| 37 | Асфальтобетонное покрытие | 4.4 | 4.4 | 2 | 2026-09-16T08:00:00 | 2026-09-23T17:00:00 | 6.0 DAYS | 0.0 |  | True | 2026-09-16T08:00:00 2026-09-23T17:00:00 | 33 |  | 9 100.0 |  |
| 38 | Барьерное и перильное ограждение | 4.5 | 4.5 | 2 | 2026-09-10T08:00:00 | 2026-09-21T17:00:00 | 8.0 DAYS | 0.0 |  |  | 2026-09-10T08:00:00 2026-09-21T17:00:00 | 33 |  | 7 100.0 |  |
| 39 | Водоотвод и лотки | 4.6 | 4.6 | 2 | 2026-09-18T08:00:00 | 2026-09-24T17:00:00 | 5.0 DAYS | 0.0 |  |  | 2026-09-18T08:00:00 2026-09-24T17:00:00 | 33 |  | 9 50.0 |  |
| 40 | Подходы и обустройство | 5 | 5 | 1 | 2026-05-29T08:00:00 | 2026-10-13T17:00:00 | 97.0 DAYS | 0.0 | True |  | 2026-05-25T08:00:00 2026-10-13T17:00:00 |  |  |  |  |
| 41 | Насыпь подходов | 5.1 | 5.1 | 2 | 2026-05-29T08:00:00 | 2026-06-22T17:00:00 | 16.0 DAYS | 60.0 |  |  | 2026-05-25T08:00:00 2026-06-16T17:00:00 | 40 |  | 8 100.0 |  |
| 42 | Укрепление конусов | 5.2 | 5.2 | 2 | 2026-06-23T08:00:00 | 2026-07-03T17:00:00 | 9.0 DAYS | 0.0 |  |  | 2026-06-23T08:00:00 2026-07-03T17:00:00 | 40 |  | 8 50.0 |  |
| 43 | Сопряжение с существующей дорогой | 5.3 | 5.3 | 2 | 2026-09-24T08:00:00 | 2026-10-07T17:00:00 | 10.0 DAYS | 0.0 |  |  | 2026-09-24T08:00:00 2026-10-07T17:00:00 | 40 |  | 8 100.0 |  |
| 44 | Дорожная разметка и знаки | 5.4 | 5.4 | 2 | 2026-10-08T08:00:00 | 2026-10-13T17:00:00 | 4.0 DAYS | 0.0 |  |  | 2026-10-08T08:00:00 2026-10-13T17:00:00 | 40 |  | 9 50.0 |  |
| 45 | Освещение на мосту | 5.5 | 5.5 | 2 | 2026-09-22T08:00:00 | 2026-10-07T17:00:00 | 12.0 DAYS | 0.0 |  |  | 2026-09-22T08:00:00 2026-10-07T17:00:00 | 40 |  | 4 100.0 |  |
| 46 | Сдача | 6 | 6 | 1 | 2026-08-12T08:00:00 | 2026-10-30T17:00:00 | 58.0 DAYS | 0.0 | True | True | 2026-08-12T08:00:00 2026-10-30T17:00:00 |  |  |  |  |
| 47 | Испытание моста статической нагрузкой | 6.1 | 6.1 | 2 | 2026-09-24T08:00:00 | 2026-09-28T17:00:00 | 3.0 DAYS | 0.0 |  | True | 2026-09-24T08:00:00 2026-09-28T17:00:00 | 46 |  | 1 100.0, 2 100.0 |  |
| 48 | Исполнительная документация | 6.2 | 6.2 | 2 | 2026-08-12T08:00:00 | 2026-09-01T17:00:00 | 15.0 DAYS | 0.0 |  |  | 2026-08-12T08:00:00 2026-09-01T17:00:00 | 46 |  | 2 100.0 | Собирать по мере закрытия работ, а не в конце - на первом этапе это стоило трёх недель. |
| 49 | Замечания стройконтроля | 6.3 | 6.3 | 2 | 2026-09-29T08:00:00 | 2026-10-07T17:00:00 | 7.0 DAYS | 0.0 |  | True | 2026-09-29T08:00:00 2026-10-07T17:00:00 | 46 |  | 1 50.0 |  |
| 50 | Устранение замечаний | 6.4 | 6.4 | 2 | 2026-10-08T08:00:00 | 2026-10-21T17:00:00 | 10.0 DAYS | 0.0 |  | True | 2026-10-08T08:00:00 2026-10-21T17:00:00 | 46 |  | 5 50.0 |  |
| 51 | Разборка объездной дороги | 6.5 | 6.5 | 2 | 2026-10-22T08:00:00 | 2026-10-29T17:00:00 | 6.0 DAYS | 0.0 |  | True | 2026-10-22T08:00:00 2026-10-29T17:00:00 | 46 |  | 8 100.0 |  |
| 52 | Рабочая комиссия | 6.6 | 6.6 | 2 | 2026-10-22T08:00:00 | 2026-10-23T17:00:00 | 2.0 DAYS | 0.0 |  |  | 2026-10-22T08:00:00 2026-10-23T17:00:00 | 46 |  | 1 100.0, 2 50.0 |  |
| 53 | Ввод в эксплуатацию | 6.7 | 6.7 | 2 | 2026-10-30T08:00:00 | 2026-10-30T17:00:00 | 0.0 DAYS | 0.0 |  | True | 2026-10-30T08:00:00 2026-10-30T17:00:00 | 46 | True |  |  |

Links (from, to, working, name):
- 2026-05-01T00:00:00 2026-05-01T00:00:00  Праздничный день
- 2026-05-11T00:00:00 2026-05-11T00:00:00  Праздничный день
- 2026-06-12T00:00:00 2026-06-12T00:00:00  Нерабочий день
