# Виадук через реку Каменку, этап 2

Schedule from MS Project XML, 2026-03-02 to 2026-10-30.

## Calendars

- Standard: Mon-Fri 08:00-12:00, 13:00-17:00; Sat-Sun off. Exceptions (off unless hours are given): 2026-05-01 (Праздничный день), 2026-05-11 (Праздничный день), 2026-06-12 (Нерабочий день).

## Resources

| Resource |
| --- |
| Гончаров А.П. |
| Ильина М.С. |
| Терентьев Д.В. |
| Сабитов Р.Р. |
| Кравец О.Н. |
| Молчанов И.И. |
| Ясенева Л.К. |
| Дорош В.М. |
| Пименов С.А. |

## Schedule

| ID | WBS | Task | Type | Duration | Start | Finish | Predecessors | Complete | Baseline start | Baseline finish | Baseline duration | Resources |
| --- | --- | --- | --- | --- | --- | --- | --- | --- | --- | --- | --- | --- |
| 1 | 1 | **Подготовительный период** |  | 17d | 2026-03-02 | 2026-03-24 |  |  | 2026-03-02 | 2026-03-24 | 17d |  |
| 2 | 1.1 | Передача площадки подрядчику | milestone | 0d | 2026-03-02 | 2026-03-02 |  | 100% | 2026-03-02 | 2026-03-02 | 0d |  |
| 3 | 1.2 | Геодезическая разбивочная основа |  | 6d | 2026-03-03 | 2026-03-10 | 2 | 100% | 2026-03-03 | 2026-03-10 | 6d | Терентьев Д.В. |
| 4 | 1.3 | Устройство временной объездной дороги |  | 14d | 2026-03-03 | 2026-03-20 | 2 | 100% | 2026-03-03 | 2026-03-20 | 14d | Дорош В.М. |
| 5 | 1.4 | Вынос сетей связи из зоны работ |  | 10d | 2026-03-11 | 2026-03-24 | 3 | 100% | 2026-03-11 | 2026-03-24 | 10d | Сабитов Р.Р. [50%] |
| 6 | 1.5 | Ограждение и бытовой городок |  | 5d | 2026-03-04 | 2026-03-10 | 2SS+2d | 100% | 2026-03-04 | 2026-03-10 | 5d | Дорош В.М. [50%] |
| 7 | 1.6 | Движение пущено по объезду | milestone | 0d | 2026-03-23 | 2026-03-23 | 4 | 100% | 2026-03-23 | 2026-03-23 | 0d |  |
| 8 | 2 | **Опоры** |  | 75d | 2026-03-11 | 2026-06-26 |  |  | 2026-03-11 | 2026-06-26 | 75d |  |
| 9 | 2.1 | **Опора №1 (береговая)** |  | 46d | 2026-03-24 | 2026-05-28 |  |  | 2026-03-24 | 2026-05-28 | 46d |  |
| 10 | 2.1.1 | Разработка котлована опоры №1 |  | 8d | 2026-03-24 | 2026-04-02 | 7 | 100% | 2026-03-24 | 2026-04-02 | 8d | Молчанов И.И. |
| 11 | 2.1.2 | Свайное поле опоры №1 |  | 16d | 2026-04-03 | 2026-04-24 | 10 | 100% | 2026-04-03 | 2026-04-24 | 16d | Молчанов И.И. |
| 12 | 2.1.3 | Ростверк опоры №1 |  | 10d | 2026-04-27 | 2026-05-12 | 11 | 100% | 2026-04-27 | 2026-05-12 | 10d | Кравец О.Н. |
| 13 | 2.1.4 | Тело опоры №1 |  | 12d | 2026-05-13 | 2026-05-28 | 12 | 100% | 2026-05-13 | 2026-05-28 | 12d | Кравец О.Н. |
| 14 | 2.2 | **Опора №2 (русловая)** |  | 65d | 2026-03-24 | 2026-06-25 |  |  | 2026-03-24 | 2026-06-18 | 65d |  |
| 15 | 2.2.1 | Устройство островка и шпунтового ограждения |  | 12d | 2026-03-24 | 2026-04-08 | 7 | 100% | 2026-03-24 | 2026-04-08 | 12d | Молчанов И.И. |
| 16 | 2.2.2 | Разработка котлована опоры №2 |  | 9d | 2026-04-09 | 2026-04-21 | 15 | 100% | 2026-04-09 | 2026-04-21 | 9d | Молчанов И.И. |
| 17 | 2.2.3 | Свайное поле опоры №2 |  | 18d | 2026-04-22 | 2026-05-19 | 16 | 100% | 2026-04-22 | 2026-05-19 | 18d | Молчанов И.И. |
| 18 | 2.2.4 | Ростверк опоры №2 |  | 12d | 2026-05-20 | 2026-06-04 | 17 | 100% | 2026-05-20 | 2026-06-04 | 12d | Кравец О.Н. |
| 19 | 2.2.5 | Тело опоры №2 |  | 14d | 2026-06-05 | 2026-06-25 | 18 | 90% | 2026-05-29 | 2026-06-18 | 14d | Кравец О.Н. |
| 20 | 2.3 | **Опора №3 (береговая)** |  | 43d | 2026-03-11 | 2026-05-12 |  |  | 2026-03-11 | 2026-05-12 | 43d |  |
| 21 | 2.3.1 | Разработка котлована опоры №3 |  | 7d | 2026-03-11 | 2026-03-19 | 6 | 100% | 2026-03-11 | 2026-03-19 | 7d | Молчанов И.И. [50%] |
| 22 | 2.3.2 | Свайное поле опоры №3 |  | 15d | 2026-03-20 | 2026-04-09 | 21 | 100% | 2026-03-20 | 2026-04-09 | 15d | Молчанов И.И. [50%] |
| 23 | 2.3.3 | Ростверк опоры №3 |  | 10d | 2026-04-10 | 2026-04-23 | 22 | 100% | 2026-04-10 | 2026-04-23 | 10d | Кравец О.Н. [50%] |
| 24 | 2.3.4 | Тело опоры №3 |  | 11d | 2026-04-24 | 2026-05-12 | 23 | 100% | 2026-04-24 | 2026-05-12 | 11d | Кравец О.Н. [50%] |
| 25 | 2.4 | Все опоры забетонированы | milestone | 0d | 2026-06-26 | 2026-06-26 | 13, 19, 24 |  | 2026-06-26 | 2026-06-26 | 0d |  |

Notes:
- 4: Согласовали с ГИБДД схему на весь период работ, знаки выставлены.
- 11: Три сваи ушли ниже проектной отметки, добрали бетоном по согласованию с автором проекта.
- 15: Уровень воды в мае держался выше графика, шпунт добивали дважды.

| ID | WBS | Task | Type | Duration | Start | Finish | Predecessors | Complete | Baseline start | Baseline finish | Baseline duration | Resources |
| --- | --- | --- | --- | --- | --- | --- | --- | --- | --- | --- | --- | --- |
| 26 | 3 | **Пролётное строение** |  | 83d | 2026-04-27 | 2026-08-24 |  |  | 2026-04-27 | 2026-08-24 | 83d |  |
| 27 | 3.1 | Изготовление балок на заводе |  | 30d | 2026-04-27 | 2026-06-09 | 12SS | 100% | 2026-04-27 | 2026-06-09 | 30d |  |
| 28 | 3.2 | Доставка балок на площадку |  | 8d | 2026-06-10 | 2026-06-22 | 27 | 100% | 2026-06-10 | 2026-06-22 | 8d | Дорош В.М. [50%] |
| 29 | 3.3 | Монтаж балок пролёта 1-2 |  | 9d | 2026-06-26 | 2026-07-08 | 13, 19, 28 | 45% | 2026-06-18 | 2026-06-30 | 9d | Ясенева Л.К. |
| 30 | 3.4 | Монтаж балок пролёта 2-3 |  | 9d | 2026-07-13 | 2026-07-23 | 29FS+2d |  | 2026-07-13 | 2026-07-23 | 9d | Ясенева Л.К. |
| 31 | 3.5 | Омоноличивание стыков |  | 8d | 2026-07-24 | 2026-08-04 | 30 |  | 2026-07-24 | 2026-08-04 | 8d | Кравец О.Н. |
| 32 | 3.6 | Устройство плиты проезжей части |  | 14d | 2026-08-05 | 2026-08-24 | 31 |  | 2026-08-05 | 2026-08-24 | 14d | Кравец О.Н. |
| 33 | 4 | **Мостовое полотно** |  | 23d | 2026-08-25 | 2026-09-24 |  |  | 2026-08-25 | 2026-09-24 | 23d |  |
| 34 | 4.1 | Гидроизоляция плиты |  | 7d | 2026-08-25 | 2026-09-02 | 32 |  | 2026-08-25 | 2026-09-02 | 7d | Пименов С.А. |
| 35 | 4.2 | Защитный слой |  | 5d | 2026-09-03 | 2026-09-09 | 34 |  | 2026-09-03 | 2026-09-09 | 5d | Пименов С.А. |
| 36 | 4.3 | Деформационные швы |  | 6d | 2026-09-08 | 2026-09-15 | 35SS+3d |  | 2026-09-08 | 2026-09-15 | 6d | Ясенева Л.К. [50%] |
| 37 | 4.4 | Асфальтобетонное покрытие |  | 6d | 2026-09-16 | 2026-09-23 | 35, 36 |  | 2026-09-16 | 2026-09-23 | 6d | Пименов С.А. |
| 38 | 4.5 | Барьерное и перильное ограждение |  | 8d | 2026-09-10 | 2026-09-21 | 35 |  | 2026-09-10 | 2026-09-21 | 8d | Ясенева Л.К. |
| 39 | 4.6 | Водоотвод и лотки |  | 5d | 2026-09-18 | 2026-09-24 | 37SS+2d |  | 2026-09-18 | 2026-09-24 | 5d | Пименов С.А. [50%] |
| 40 | 5 | **Подходы и обустройство** |  | 97d | 2026-05-29 | 2026-10-13 |  |  | 2026-05-25 | 2026-10-13 | 97d |  |
| 41 | 5.1 | Насыпь подходов |  | 16d | 2026-05-29 | 2026-06-22 | 13 | 60% | 2026-05-25 | 2026-06-16 | 16d | Дорош В.М. |
| 42 | 5.2 | Укрепление конусов |  | 9d | 2026-06-23 | 2026-07-03 | 41 |  | 2026-06-23 | 2026-07-03 | 9d | Дорош В.М. [50%] |
| 43 | 5.3 | Сопряжение с существующей дорогой |  | 10d | 2026-09-24 | 2026-10-07 | 41, 37 |  | 2026-09-24 | 2026-10-07 | 10d | Дорош В.М. |
| 44 | 5.4 | Дорожная разметка и знаки |  | 4d | 2026-10-08 | 2026-10-13 | 43 |  | 2026-10-08 | 2026-10-13 | 4d | Пименов С.А. [50%] |
| 45 | 5.5 | Освещение на мосту |  | 12d | 2026-09-22 | 2026-10-07 | 38 |  | 2026-09-22 | 2026-10-07 | 12d | Сабитов Р.Р. |
| 46 | 6 | **Сдача** |  | 58d | 2026-08-12 | 2026-10-30 |  |  | 2026-08-12 | 2026-10-30 | 58d |  |
| 47 | 6.1 | Испытание моста статической нагрузкой |  | 3d | 2026-09-24 | 2026-09-28 | 37, 38 |  | 2026-09-24 | 2026-09-28 | 3d | Гончаров А.П.; Ильина М.С. |
| 48 | 6.2 | Исполнительная документация |  | 15d | 2026-08-12 | 2026-09-01 | 32SS+5d |  | 2026-08-12 | 2026-09-01 | 15d | Ильина М.С. |
| 49 | 6.3 | Замечания стройконтроля |  | 7d | 2026-09-29 | 2026-10-07 | 47 |  | 2026-09-29 | 2026-10-07 | 7d | Гончаров А.П. [50%] |
| 50 | 6.4 | Устранение замечаний |  | 10d | 2026-10-08 | 2026-10-21 | 49 |  | 2026-10-08 | 2026-10-21 | 10d | Кравец О.Н. [50%] |
| 51 | 6.5 | Разборка объездной дороги |  | 6d | 2026-10-22 | 2026-10-29 | 44, 50 |  | 2026-10-22 | 2026-10-29 | 6d | Дорош В.М. |
| 52 | 6.6 | Рабочая комиссия |  | 2d | 2026-10-22 | 2026-10-23 | 50, 48 |  | 2026-10-22 | 2026-10-23 | 2d | Гончаров А.П.; Ильина М.С. [50%] |
| 53 | 6.7 | Ввод в эксплуатацию | milestone | 0d | 2026-10-30 | 2026-10-30 | 52, 51 |  | 2026-10-30 | 2026-10-30 | 0d |  |

Notes:
- 27: Завод отгружает партиями по четыре балки, всего три партии.
- 29: Кран стоит на левом берегу, перестановка на правый занимает два дня - учтено в монтаже пролёта 2-3.
- 48: Собирать по мере закрытия работ, а не в конце - на первом этапе это стоило трёх недель.
