| id | name | wbs | outline_number | outline_level | start | finish | duration | percent_complete | is_summary | is_critical | baseline | parent_id | is_milestone | assignments | notes |
| --- | --- | --- | --- | --- | --- | --- | --- | --- | --- | --- | --- | --- | --- | --- | --- |
| 1 | Mobilisation | 1 | 1 | 1 | 2026-02-02T08:00:00 | 2026-03-04T17:00:00 | 23.0 DAYS | 0.0 | True | True | 2026-02-02T08:00:00 2026-03-04T17:00:00 |  |  |  |  |
| 2 | Contract signed | 1.1 | 1.1 | 2 | 2026-02-02T08:00:00 | 2026-02-02T17:00:00 | 0.0 DAYS | 100.0 |  | True | 2026-02-02T08:00:00 2026-02-02T17:00:00 | 1 | True |  |  |
| 3 | Project team confirmed both sides | 1.2 | 1.2 | 2 | 2026-02-03T08:00:00 | 2026-02-09T17:00:00 | 5.0 DAYS | 100.0 |  | True | 2026-02-03T08:00:00 2026-02-09T17:00:00 | 1 |  | 1 100.0 |  |
| 4 | Kick-off workshop on site | 1.3 | 1.3 | 2 | 2026-02-10T08:00:00 | 2026-02-11T17:00:00 | 2.0 DAYS | 100.0 |  | True | 2026-02-10T08:00:00 2026-02-11T17:00:00 | 1 |  | 1 100.0, 2 100.0 | Held in the Tilbury training room. Twenty two attendees, minutes circulated the same day. |
| 5 | Environments requested from IT | 1.4 | 1.4 | 2 | 2026-02-12T08:00:00 | 2026-02-16T17:00:00 | 3.0 DAYS | 100.0 |  |  | 2026-02-12T08:00:00 2026-02-16T17:00:00 | 1 |  | 3 50.0 |  |
| 6 | Test and training environments live | 1.5 | 1.5 | 2 | 2026-02-17T08:00:00 | 2026-03-04T17:00:00 | 12.0 DAYS | 100.0 |  |  | 2026-02-17T08:00:00 2026-03-04T17:00:00 | 1 |  | 3 50.0 | Four weeks quoted by group IT, three achieved because the sandbox was reused. |
| 7 | Discovery | 2 | 2 | 1 | 2026-02-12T08:00:00 | 2026-03-17T17:00:00 | 24.0 DAYS | 0.0 | True | True | 2026-02-12T08:00:00 2026-03-17T17:00:00 |  |  |  |  |
| 8 | As-is process mapping - inbound | 2.1 | 2.1 | 2 | 2026-02-12T08:00:00 | 2026-02-23T17:00:00 | 8.0 DAYS | 100.0 |  | True | 2026-02-12T08:00:00 2026-02-23T17:00:00 | 7 |  | 4 100.0 |  |
| 9 | As-is process mapping - putaway and picking | 2.2 | 2.2 | 2 | 2026-02-17T08:00:00 | 2026-03-02T17:00:00 | 10.0 DAYS | 100.0 |  | True | 2026-02-17T08:00:00 2026-03-02T17:00:00 | 7 |  | 4 100.0 |  |
| 10 | As-is process mapping - despatch and returns | 2.3 | 2.3 | 2 | 2026-02-23T08:00:00 | 2026-03-04T17:00:00 | 8.0 DAYS | 100.0 |  | True | 2026-02-23T08:00:00 2026-03-04T17:00:00 | 7 |  | 4 100.0 |  |
| 11 | Site survey - racking, lanes, wifi coverage | 2.4 | 2.4 | 2 | 2026-02-12T08:00:00 | 2026-02-17T17:00:00 | 4.0 DAYS | 100.0 |  |  | 2026-02-12T08:00:00 2026-02-17T17:00:00 | 7 |  | 5 100.0 | Wifi drops out in the returns bay behind the racking. Two extra access points needed, raised as a change. |
| 12 | Gap analysis workshop | 2.5 | 2.5 | 2 | 2026-03-05T08:00:00 | 2026-03-09T17:00:00 | 3.0 DAYS | 100.0 |  | True | 2026-03-05T08:00:00 2026-03-09T17:00:00 | 7 |  | 4 100.0, 2 50.0 |  |
| 13 | Solution design signed off | 2.6 | 2.6 | 2 | 2026-03-17T08:00:00 | 2026-03-17T17:00:00 | 0.0 DAYS | 100.0 |  | True | 2026-03-17T08:00:00 2026-03-17T17:00:00 | 7 | True |  |  |
| 14 | Build and configuration | 3 | 3 | 1 | 2026-02-18T08:00:00 | 2026-05-07T17:00:00 | 55.0 DAYS | 0.0 | True | True | 2026-02-18T08:00:00 2026-04-30T17:00:00 |  |  |  |  |
| 15 | Core configuration | 3.1 | 3.1 | 2 | 2026-03-18T08:00:00 | 2026-05-07T17:00:00 | 35.0 DAYS | 0.0 | True | True | 2026-03-18T08:00:00 2026-04-30T17:00:00 | 14 |  |  |  |
| 16 | Warehouse structure and locations | 3.1.1 | 3.1.1 | 3 | 2026-03-18T08:00:00 | 2026-03-30T17:00:00 | 9.0 DAYS | 100.0 |  | True | 2026-03-18T08:00:00 2026-03-30T17:00:00 | 15 |  | 2 100.0 |  |
| 17 | Inbound and putaway rules | 3.1.2 | 3.1.2 | 3 | 2026-03-31T08:00:00 | 2026-04-16T17:00:00 | 11.0 DAYS | 100.0 |  | True | 2026-03-31T08:00:00 2026-04-16T17:00:00 | 15 |  | 2 100.0 |  |
| 18 | Pick strategies and wave rules | 3.1.3 | 3.1.3 | 3 | 2026-04-17T08:00:00 | 2026-05-05T17:00:00 | 13.0 DAYS | 85.0 |  | True | 2026-04-10T08:00:00 2026-04-28T17:00:00 | 15 |  | 2 100.0, 6 50.0 | Wave sizing still being tuned with the shift managers. Two more sessions booked. |
| 19 | Despatch, loading and returns | 3.1.4 | 3.1.4 | 3 | 2026-04-27T08:00:00 | 2026-05-07T17:00:00 | 9.0 DAYS | 40.0 |  | True | 2026-04-20T08:00:00 2026-04-30T17:00:00 | 15 |  | 6 100.0 |  |
| 20 | Integrations | 3.2 | 3.2 | 2 | 2026-03-18T08:00:00 | 2026-04-30T17:00:00 | 30.0 DAYS | 0.0 | True |  | 2026-03-17T08:00:00 2026-04-30T17:00:00 | 14 |  |  |  |
| 21 | Interface specification with ERP team | 3.2.1 | 3.2.1 | 3 | 2026-03-18T08:00:00 | 2026-03-26T17:00:00 | 7.0 DAYS | 100.0 |  |  | 2026-03-18T08:00:00 2026-03-26T17:00:00 | 20 |  | 3 100.0 |  |
| 22 | Order and stock interfaces built | 3.2.2 | 3.2.2 | 3 | 2026-03-27T08:00:00 | 2026-04-20T17:00:00 | 15.0 DAYS | 100.0 |  |  | 2026-03-27T08:00:00 2026-04-20T17:00:00 | 20 |  | 3 100.0 |  |
| 23 | Carrier integration - two carriers | 3.2.3 | 3.2.3 | 3 | 2026-03-27T08:00:00 | 2026-04-15T17:00:00 | 12.0 DAYS | 70.0 |  |  | 2026-03-17T08:00:00 2026-04-01T17:00:00 | 20 |  | 3 50.0, 7 50.0 | Second carrier will not give us a test account until their own release in July. Slipping to hypercare if it holds. |
| 24 | Interface testing end to end | 3.2.4 | 3.2.4 | 3 | 2026-04-21T08:00:00 | 2026-04-30T17:00:00 | 8.0 DAYS | 0.0 |  |  | 2026-04-21T08:00:00 2026-04-30T17:00:00 | 20 |  | 3 100.0 |  |
| 25 | Hardware | 3.3 | 3.3 | 2 | 2026-02-18T08:00:00 | 2026-03-27T17:00:00 | 28.0 DAYS | 0.0 | True |  | 2026-02-18T08:00:00 2026-03-27T17:00:00 | 14 |  |  |  |
| 26 | Scanners and printers ordered | 3.3.1 | 3.3.1 | 3 | 2026-02-18T08:00:00 | 2026-02-19T17:00:00 | 2.0 DAYS | 100.0 |  |  | 2026-02-18T08:00:00 2026-02-19T17:00:00 | 25 |  | 5 50.0 |  |
| 27 | Hardware delivery | 3.3.2 | 3.3.2 | 3 | 2026-02-20T08:00:00 | 2026-03-19T17:00:00 | 20.0 DAYS | 100.0 |  |  | 2026-02-20T08:00:00 2026-03-19T17:00:00 | 25 |  |  |  |
| 28 | Wifi remediation in returns bay | 3.3.3 | 3.3.3 | 3 | 2026-03-04T08:00:00 | 2026-03-10T17:00:00 | 5.0 DAYS | 100.0 |  |  | 2026-03-04T08:00:00 2026-03-10T17:00:00 | 25 |  | 5 100.0 |  |
| 29 | Device staging and labelling | 3.3.4 | 3.3.4 | 3 | 2026-03-20T08:00:00 | 2026-03-27T17:00:00 | 6.0 DAYS | 100.0 |  |  | 2026-03-20T08:00:00 2026-03-27T17:00:00 | 25 |  | 5 100.0 |  |
| 30 | Data | 4 | 4 | 1 | 2026-03-18T08:00:00 | 2026-05-29T17:00:00 | 50.0 DAYS | 0.0 | True |  | 2026-03-18T08:00:00 2026-05-29T17:00:00 |  |  |  |  |
| 31 | Data extract from legacy system | 4.1 | 4.1 | 2 | 2026-03-18T08:00:00 | 2026-03-25T17:00:00 | 6.0 DAYS | 100.0 |  |  | 2026-03-18T08:00:00 2026-03-25T17:00:00 | 30 |  | 9 100.0 |  |
| 32 | Cleansing rules agreed with operations | 4.2 | 4.2 | 2 | 2026-03-26T08:00:00 | 2026-04-08T17:00:00 | 8.0 DAYS | 100.0 |  |  | 2026-03-26T08:00:00 2026-04-08T17:00:00 | 30 |  | 9 100.0, 4 50.0 |  |
| 33 | Migration scripts written | 4.3 | 4.3 | 2 | 2026-04-09T08:00:00 | 2026-04-24T17:00:00 | 12.0 DAYS | 100.0 |  |  | 2026-04-09T08:00:00 2026-04-24T17:00:00 | 30 |  | 9 100.0 |  |
| 34 | Trial migration one | 4.4 | 4.4 | 2 | 2026-04-27T08:00:00 | 2026-04-30T17:00:00 | 4.0 DAYS | 100.0 |  |  | 2026-04-27T08:00:00 2026-04-30T17:00:00 | 30 |  | 9 100.0 | Two thousand SKUs came across without a putaway class. Rule added, rerun clean. |
| 35 | Trial migration two | 4.5 | 4.5 | 2 | 2026-05-15T08:00:00 | 2026-05-20T17:00:00 | 4.0 DAYS | 60.0 |  |  | 2026-05-11T08:00:00 2026-05-14T17:00:00 | 30 |  | 9 100.0 |  |
| 36 | Stock count and reconciliation | 4.6 | 4.6 | 2 | 2026-05-21T08:00:00 | 2026-05-29T17:00:00 | 6.0 DAYS | 0.0 |  |  | 2026-05-21T08:00:00 2026-05-29T17:00:00 | 30 |  | 8 100.0 |  |
| 37 | Testing | 5 | 5 | 1 | 2026-04-24T08:00:00 | 2026-06-10T17:00:00 | 33.0 DAYS | 0.0 | True | True | 2026-04-21T08:00:00 2026-06-10T17:00:00 |  |  |  |  |
| 38 | Test scripts written | 5.1 | 5.1 | 2 | 2026-04-24T08:00:00 | 2026-05-07T17:00:00 | 10.0 DAYS | 80.0 |  | True | 2026-04-21T08:00:00 2026-05-04T17:00:00 | 37 |  | 6 100.0 |  |
| 39 | System integration testing | 5.2 | 5.2 | 2 | 2026-05-08T08:00:00 | 2026-05-26T17:00:00 | 12.0 DAYS | 0.0 |  | True | 2026-05-08T08:00:00 2026-05-26T17:00:00 | 37 |  | 6 100.0, 3 50.0 |  |
| 40 | User acceptance testing | 5.3 | 5.3 | 2 | 2026-05-27T08:00:00 | 2026-06-09T17:00:00 | 10.0 DAYS | 0.0 |  | True | 2026-05-27T08:00:00 2026-06-09T17:00:00 | 37 |  | 4 100.0, 8 100.0 |  |
| 41 | Defect fixing | 5.4 | 5.4 | 2 | 2026-05-15T08:00:00 | 2026-06-02T17:00:00 | 12.0 DAYS | 0.0 |  |  | 2026-05-15T08:00:00 2026-06-02T17:00:00 | 37 |  | 2 100.0 |  |
| 42 | UAT sign-off | 5.5 | 5.5 | 2 | 2026-06-10T08:00:00 | 2026-06-10T17:00:00 | 0.0 DAYS | 0.0 |  | True | 2026-06-10T08:00:00 2026-06-10T17:00:00 | 37 | True |  |  |
| 43 | Training and readiness | 6 | 6 | 1 | 2026-05-08T08:00:00 | 2026-06-16T17:00:00 | 27.0 DAYS | 0.0 | True | True | 2026-05-08T08:00:00 2026-06-16T17:00:00 |  |  |  |  |
| 44 | Training material drafted | 6.1 | 6.1 | 2 | 2026-05-08T08:00:00 | 2026-05-26T17:00:00 | 12.0 DAYS | 0.0 |  | True | 2026-05-08T08:00:00 2026-05-26T17:00:00 | 43 |  | 10 100.0 |  |
| 45 | Train the trainer | 6.2 | 6.2 | 2 | 2026-05-27T08:00:00 | 2026-06-01T17:00:00 | 4.0 DAYS | 0.0 |  | True | 2026-05-27T08:00:00 2026-06-01T17:00:00 | 43 |  | 10 100.0 |  |
| 46 | Shift training - days | 6.3 | 6.3 | 2 | 2026-06-02T08:00:00 | 2026-06-08T17:00:00 | 5.0 DAYS | 0.0 |  | True | 2026-06-02T08:00:00 2026-06-08T17:00:00 | 43 |  | 10 100.0, 8 50.0 |  |
| 47 | Shift training - nights | 6.4 | 6.4 | 2 | 2026-06-09T08:00:00 | 2026-06-15T17:00:00 | 5.0 DAYS | 0.0 |  | True | 2026-06-09T08:00:00 2026-06-15T17:00:00 | 43 |  | 10 100.0 | Nights only run Monday to Thursday, so this spans two weeks on the calendar. |
| 48 | Cutover plan walked through with site | 6.5 | 6.5 | 2 | 2026-06-11T08:00:00 | 2026-06-15T17:00:00 | 3.0 DAYS | 0.0 |  | True | 2026-06-11T08:00:00 2026-06-15T17:00:00 | 43 |  | 1 100.0, 5 50.0 |  |
| 49 | Go-live decision | 6.6 | 6.6 | 2 | 2026-06-16T08:00:00 | 2026-06-16T17:00:00 | 0.0 DAYS | 0.0 |  | True | 2026-06-16T08:00:00 2026-06-16T17:00:00 | 43 | True |  |  |
| 50 | Cutover and hypercare | 7 | 7 | 1 | 2026-06-17T08:00:00 | 2026-07-28T17:00:00 | 30.0 DAYS | 0.0 | True | True | 2026-06-17T08:00:00 2026-07-28T17:00:00 |  |  |  |  |
| 51 | Final stock freeze | 7.1 | 7.1 | 2 | 2026-06-17T08:00:00 | 2026-06-18T17:00:00 | 2.0 DAYS | 0.0 |  | True | 2026-06-17T08:00:00 2026-06-18T17:00:00 | 50 |  | 8 100.0 |  |
| 52 | Production migration | 7.2 | 7.2 | 2 | 2026-06-19T08:00:00 | 2026-06-23T17:00:00 | 3.0 DAYS | 0.0 |  | True | 2026-06-19T08:00:00 2026-06-23T17:00:00 | 50 |  | 9 100.0 |  |
| 53 | Go live | 7.3 | 7.3 | 2 | 2026-06-24T08:00:00 | 2026-06-24T17:00:00 | 0.0 DAYS | 0.0 |  | True | 2026-06-24T08:00:00 2026-06-24T17:00:00 | 50 | True |  |  |
| 54 | Hypercare - week one on site | 7.4 | 7.4 | 2 | 2026-06-25T08:00:00 | 2026-07-01T17:00:00 | 5.0 DAYS | 0.0 |  | True | 2026-06-25T08:00:00 2026-07-01T17:00:00 | 50 |  | 2 100.0, 6 100.0 |  |
| 55 | Hypercare - weeks two to four remote | 7.5 | 7.5 | 2 | 2026-07-02T08:00:00 | 2026-07-22T17:00:00 | 15.0 DAYS | 0.0 |  | True | 2026-07-02T08:00:00 2026-07-22T17:00:00 | 50 |  | 2 50.0 |  |
| 56 | Legacy system decommissioned | 7.6 | 7.6 | 2 | 2026-07-23T08:00:00 | 2026-07-28T17:00:00 | 4.0 DAYS | 0.0 |  | True | 2026-07-23T08:00:00 2026-07-28T17:00:00 | 50 |  | 3 50.0 |  |
| 57 | Project closure report | 7.7 | 7.7 | 2 | 2026-07-09T08:00:00 | 2026-07-15T17:00:00 | 5.0 DAYS | 0.0 |  |  | 2026-07-09T08:00:00 2026-07-15T17:00:00 | 50 |  | 1 50.0 |  |

Links (from, to, working, name):
- 2026-04-03T00:00:00 2026-04-03T00:00:00  Bank holiday
- 2026-04-06T00:00:00 2026-04-06T00:00:00  Bank holiday
- 2026-05-25T00:00:00 2026-05-25T00:00:00  Site closed
