# Warehouse management system rollout - Tilbury

Schedule from MS Project XML, 2026-02-02 to 2026-07-28.

## Calendars

- Standard: Mon-Fri 08:00-12:00, 13:00-17:00; Sat-Sun off. Exceptions (off unless hours are given): 2026-04-03 (Bank holiday), 2026-04-06 (Bank holiday), 2026-05-25 (Site closed).

## Resources

| Resource |
| --- |
| Hannah Whitfield |
| Oliver Nakamura |
| Ade Balogun |
| Zofia Marchetti |
| Greg Lindqvist |
| Nadia Farouk |
| Duncan Reyes |
| Beth Okonkwo |
| Rashid Malouf |
| Ellie Trent |

## Schedule

| ID | WBS | Task | Type | Duration | Start | Finish | Predecessors | Complete | Baseline start | Baseline finish | Baseline duration | Resources |
| --- | --- | --- | --- | --- | --- | --- | --- | --- | --- | --- | --- | --- |
| 1 | 1 | **Mobilisation** |  | 23d | 2026-02-02 | 2026-03-04 |  |  | 2026-02-02 | 2026-03-04 | 23d |  |
| 2 | 1.1 | Contract signed | milestone | 0d | 2026-02-02 | 2026-02-02 |  | 100% | 2026-02-02 | 2026-02-02 | 0d |  |
| 3 | 1.2 | Project team confirmed both sides |  | 5d | 2026-02-03 | 2026-02-09 | 2 | 100% | 2026-02-03 | 2026-02-09 | 5d | Hannah Whitfield |
| 4 | 1.3 | Kick-off workshop on site |  | 2d | 2026-02-10 | 2026-02-11 | 3 | 100% | 2026-02-10 | 2026-02-11 | 2d | Hannah Whitfield; Oliver Nakamura |
| 5 | 1.4 | Environments requested from IT |  | 3d | 2026-02-12 | 2026-02-16 | 4 | 100% | 2026-02-12 | 2026-02-16 | 3d | Ade Balogun [50%] |
| 6 | 1.5 | Test and training environments live |  | 12d | 2026-02-17 | 2026-03-04 | 5 | 100% | 2026-02-17 | 2026-03-04 | 12d | Ade Balogun [50%] |
| 7 | 2 | **Discovery** |  | 24d | 2026-02-12 | 2026-03-17 |  |  | 2026-02-12 | 2026-03-17 | 24d |  |
| 8 | 2.1 | As-is process mapping - inbound |  | 8d | 2026-02-12 | 2026-02-23 | 4 | 100% | 2026-02-12 | 2026-02-23 | 8d | Zofia Marchetti |
| 9 | 2.2 | As-is process mapping - putaway and picking |  | 10d | 2026-02-17 | 2026-03-02 | 8SS+3d | 100% | 2026-02-17 | 2026-03-02 | 10d | Zofia Marchetti |
| 10 | 2.3 | As-is process mapping - despatch and returns |  | 8d | 2026-02-23 | 2026-03-04 | 9SS+4d | 100% | 2026-02-23 | 2026-03-04 | 8d | Zofia Marchetti |
| 11 | 2.4 | Site survey - racking, lanes, wifi coverage |  | 4d | 2026-02-12 | 2026-02-17 | 4 | 100% | 2026-02-12 | 2026-02-17 | 4d | Greg Lindqvist |
| 12 | 2.5 | Gap analysis workshop |  | 3d | 2026-03-05 | 2026-03-09 | 10, 11 | 100% | 2026-03-05 | 2026-03-09 | 3d | Zofia Marchetti; Oliver Nakamura [50%] |
| 13 | 2.6 | Solution design signed off | milestone | 0d | 2026-03-17 | 2026-03-17 | 12FS+5d | 100% | 2026-03-17 | 2026-03-17 | 0d |  |
| 14 | 3 | **Build and configuration** |  | 55d | 2026-02-18 | 2026-05-07 |  |  | 2026-02-18 | 2026-04-30 | 55d |  |
| 15 | 3.1 | **Core configuration** |  | 35d | 2026-03-18 | 2026-05-07 |  |  | 2026-03-18 | 2026-04-30 | 35d |  |
| 16 | 3.1.1 | Warehouse structure and locations |  | 9d | 2026-03-18 | 2026-03-30 | 13 | 100% | 2026-03-18 | 2026-03-30 | 9d | Oliver Nakamura |
| 17 | 3.1.2 | Inbound and putaway rules |  | 11d | 2026-03-31 | 2026-04-16 | 16 | 100% | 2026-03-31 | 2026-04-16 | 11d | Oliver Nakamura |
| 18 | 3.1.3 | Pick strategies and wave rules |  | 13d | 2026-04-17 | 2026-05-05 | 17 | 85% | 2026-04-10 | 2026-04-28 | 13d | Oliver Nakamura; Nadia Farouk [50%] |
| 19 | 3.1.4 | Despatch, loading and returns |  | 9d | 2026-04-27 | 2026-05-07 | 18SS+6d | 40% | 2026-04-20 | 2026-04-30 | 9d | Nadia Farouk |
| 20 | 3.2 | **Integrations** |  | 30d | 2026-03-18 | 2026-04-30 |  |  | 2026-03-17 | 2026-04-30 | 30d |  |
| 21 | 3.2.1 | Interface specification with ERP team |  | 7d | 2026-03-18 | 2026-03-26 | 13 | 100% | 2026-03-18 | 2026-03-26 | 7d | Ade Balogun |
| 22 | 3.2.2 | Order and stock interfaces built |  | 15d | 2026-03-27 | 2026-04-20 | 21 | 100% | 2026-03-27 | 2026-04-20 | 15d | Ade Balogun |
| 23 | 3.2.3 | Carrier integration - two carriers |  | 12d | 2026-03-27 | 2026-04-15 | 21 | 70% | 2026-03-17 | 2026-04-01 | 12d | Ade Balogun [50%]; Duncan Reyes [50%] |
| 24 | 3.2.4 | Interface testing end to end |  | 8d | 2026-04-21 | 2026-04-30 | 22, 23 |  | 2026-04-21 | 2026-04-30 | 8d | Ade Balogun |

Notes:
- 4: Held in the Tilbury training room. Twenty two attendees, minutes circulated the same day.
- 6: Four weeks quoted by group IT, three achieved because the sandbox was reused.
- 11: Wifi drops out in the returns bay behind the racking. Two extra access points needed, raised as a change.
- 18: Wave sizing still being tuned with the shift managers. Two more sessions booked.
- 23: Second carrier will not give us a test account until their own release in July. Slipping to hypercare if it holds.

| ID | WBS | Task | Type | Duration | Start | Finish | Predecessors | Complete | Baseline start | Baseline finish | Baseline duration | Resources |
| --- | --- | --- | --- | --- | --- | --- | --- | --- | --- | --- | --- | --- |
| 25 | 3.3 | **Hardware** |  | 28d | 2026-02-18 | 2026-03-27 |  |  | 2026-02-18 | 2026-03-27 | 28d |  |
| 26 | 3.3.1 | Scanners and printers ordered |  | 2d | 2026-02-18 | 2026-02-19 | 11 | 100% | 2026-02-18 | 2026-02-19 | 2d | Greg Lindqvist [50%] |
| 27 | 3.3.2 | Hardware delivery |  | 20d | 2026-02-20 | 2026-03-19 | 26 | 100% | 2026-02-20 | 2026-03-19 | 20d |  |
| 28 | 3.3.3 | Wifi remediation in returns bay |  | 5d | 2026-03-04 | 2026-03-10 | 11FS+10d | 100% | 2026-03-04 | 2026-03-10 | 5d | Greg Lindqvist |
| 29 | 3.3.4 | Device staging and labelling |  | 6d | 2026-03-20 | 2026-03-27 | 27, 28 | 100% | 2026-03-20 | 2026-03-27 | 6d | Greg Lindqvist |
| 30 | 4 | **Data** |  | 50d | 2026-03-18 | 2026-05-29 |  |  | 2026-03-18 | 2026-05-29 | 50d |  |
| 31 | 4.1 | Data extract from legacy system |  | 6d | 2026-03-18 | 2026-03-25 | 13 | 100% | 2026-03-18 | 2026-03-25 | 6d | Rashid Malouf |
| 32 | 4.2 | Cleansing rules agreed with operations |  | 8d | 2026-03-26 | 2026-04-08 | 31 | 100% | 2026-03-26 | 2026-04-08 | 8d | Rashid Malouf; Zofia Marchetti [50%] |
| 33 | 4.3 | Migration scripts written |  | 12d | 2026-04-09 | 2026-04-24 | 32 | 100% | 2026-04-09 | 2026-04-24 | 12d | Rashid Malouf |
| 34 | 4.4 | Trial migration one |  | 4d | 2026-04-27 | 2026-04-30 | 33, 16 | 100% | 2026-04-27 | 2026-04-30 | 4d | Rashid Malouf |
| 35 | 4.5 | Trial migration two |  | 4d | 2026-05-15 | 2026-05-20 | 34FS+10d | 60% | 2026-05-11 | 2026-05-14 | 4d | Rashid Malouf |
| 36 | 4.6 | Stock count and reconciliation |  | 6d | 2026-05-21 | 2026-05-29 | 35 |  | 2026-05-21 | 2026-05-29 | 6d | Beth Okonkwo |
| 37 | 5 | **Testing** |  | 33d | 2026-04-24 | 2026-06-10 |  |  | 2026-04-21 | 2026-06-10 | 33d |  |
| 38 | 5.1 | Test scripts written |  | 10d | 2026-04-24 | 2026-05-07 | 18SS+5d | 80% | 2026-04-21 | 2026-05-04 | 10d | Nadia Farouk |
| 39 | 5.2 | System integration testing |  | 12d | 2026-05-08 | 2026-05-26 | 24, 38 |  | 2026-05-08 | 2026-05-26 | 12d | Nadia Farouk; Ade Balogun [50%] |
| 40 | 5.3 | User acceptance testing |  | 10d | 2026-05-27 | 2026-06-09 | 39, 29 |  | 2026-05-27 | 2026-06-09 | 10d | Zofia Marchetti; Beth Okonkwo |
| 41 | 5.4 | Defect fixing |  | 12d | 2026-05-15 | 2026-06-02 | 39SS+5d |  | 2026-05-15 | 2026-06-02 | 12d | Oliver Nakamura |
| 42 | 5.5 | UAT sign-off | milestone | 0d | 2026-06-10 | 2026-06-10 | 40, 41 |  | 2026-06-10 | 2026-06-10 | 0d |  |
| 43 | 6 | **Training and readiness** |  | 27d | 2026-05-08 | 2026-06-16 |  |  | 2026-05-08 | 2026-06-16 | 27d |  |
| 44 | 6.1 | Training material drafted |  | 12d | 2026-05-08 | 2026-05-26 | 19 |  | 2026-05-08 | 2026-05-26 | 12d | Ellie Trent |
| 45 | 6.2 | Train the trainer |  | 4d | 2026-05-27 | 2026-06-01 | 44, 40SS |  | 2026-05-27 | 2026-06-01 | 4d | Ellie Trent |
| 46 | 6.3 | Shift training - days |  | 5d | 2026-06-02 | 2026-06-08 | 45 |  | 2026-06-02 | 2026-06-08 | 5d | Ellie Trent; Beth Okonkwo [50%] |
| 47 | 6.4 | Shift training - nights |  | 5d | 2026-06-09 | 2026-06-15 | 46 |  | 2026-06-09 | 2026-06-15 | 5d | Ellie Trent |
| 48 | 6.5 | Cutover plan walked through with site |  | 3d | 2026-06-11 | 2026-06-15 | 42 |  | 2026-06-11 | 2026-06-15 | 3d | Hannah Whitfield; Greg Lindqvist [50%] |
| 49 | 6.6 | Go-live decision | milestone | 0d | 2026-06-16 | 2026-06-16 | 48, 47 |  | 2026-06-16 | 2026-06-16 | 0d |  |

Notes:
- 34: Two thousand SKUs came across without a putaway class. Rule added, rerun clean.
- 47: Nights only run Monday to Thursday, so this spans two weeks on the calendar.

| ID | WBS | Task | Type | Duration | Start | Finish | Predecessors | Baseline start | Baseline finish | Baseline duration | Resources |
| --- | --- | --- | --- | --- | --- | --- | --- | --- | --- | --- | --- |
| 50 | 7 | **Cutover and hypercare** |  | 30d | 2026-06-17 | 2026-07-28 |  | 2026-06-17 | 2026-07-28 | 30d |  |
| 51 | 7.1 | Final stock freeze |  | 2d | 2026-06-17 | 2026-06-18 | 49 | 2026-06-17 | 2026-06-18 | 2d | Beth Okonkwo |
| 52 | 7.2 | Production migration |  | 3d | 2026-06-19 | 2026-06-23 | 51 | 2026-06-19 | 2026-06-23 | 3d | Rashid Malouf |
| 53 | 7.3 | Go live | milestone | 0d | 2026-06-24 | 2026-06-24 | 52 | 2026-06-24 | 2026-06-24 | 0d |  |
| 54 | 7.4 | Hypercare - week one on site |  | 5d | 2026-06-25 | 2026-07-01 | 53 | 2026-06-25 | 2026-07-01 | 5d | Oliver Nakamura; Nadia Farouk |
| 55 | 7.5 | Hypercare - weeks two to four remote |  | 15d | 2026-07-02 | 2026-07-22 | 54 | 2026-07-02 | 2026-07-22 | 15d | Oliver Nakamura [50%] |
| 56 | 7.6 | Legacy system decommissioned |  | 4d | 2026-07-23 | 2026-07-28 | 55 | 2026-07-23 | 2026-07-28 | 4d | Ade Balogun [50%] |
| 57 | 7.7 | Project closure report |  | 5d | 2026-07-09 | 2026-07-15 | 55SS+5d | 2026-07-09 | 2026-07-15 | 5d | Hannah Whitfield [50%] |
